# Destination Opening Programme - Integrated Master Schedule

Schedule from Primavera P6, 2025-03-02 to 2027-10-21, data date 2026-10-29, A marks actual dates.
Must finish by 2027-10-14

## Calendars

- DOP 6-Day Site (Sat-Thu): Mon-Thu 08:00-16:00; Fri off; Sat-Sun 08:00-16:00. Exceptions (off unless hours are given): 2025-03-30 to 2025-04-02, 2025-06-05 to 2025-06-09, 2025-09-23, 2026-03-19 to 2026-03-22, 2026-05-26 to 2026-05-30, 2026-09-23, 2027-02-22, 2027-03-09 to 2027-03-12, 2027-05-16 to 2027-05-20, 2027-09-23.
- DOP 7-Day T&C / Trials: Mon-Sun 08:00-16:00. Exceptions (off unless hours are given): 2025-09-23, 2026-09-23, 2027-09-23.
- DOP 5-Day Office (Sun-Thu): Mon-Thu 08:00-16:00; Fri-Sat off; Sun 08:00-16:00. Exceptions (off unless hours are given): 2025-03-30 to 2025-04-02, 2025-06-05 to 2025-06-09, 2025-09-23, 2026-03-19 to 2026-03-22, 2026-05-26 to 2026-05-30, 2026-09-23, 2027-02-22, 2027-03-09 to 2027-03-12, 2027-05-16 to 2027-05-20, 2027-09-23.

## Schedule

| ID | WBS | Activity | Type | Duration | Start | Finish | Predecessors | Complete | Remaining | Total float | Free float | Constraint | Workstream | Asset | Owner | Phase | Interface | Readiness Gate |
| --- | --- | --- | --- | --- | --- | --- | --- | --- | --- | --- | --- | --- | --- | --- | --- | --- | --- | --- |
|  | MTP | **Mesa Theme Park** |  |  | 2025-10-11 | 2027-09-14 |  |  |  |  |  |  |  |  |  |  |  |  |
|  | CON | **Construction** |  |  | 2025-10-11 | 2027-02-09 |  |  |  |  |  |  |  |  |  |  |  |  |
|  | EXT | **External Works** |  |  | 2026-12-02 | 2027-02-09 |  |  |  |  |  |  |  |  |  |  |  |  |
| MTP-CON-1410 |  | External works & landscaping |  | 40d | 2026-12-02 | 2027-01-17 | MTP-CON-1040, MTP-CON-1220 |  |  | 72d | 0d |  | CON | MTP | MWC | P1 | NONE |  |
| MTP-CON-1430 |  | Car parks & drop-off |  | 30d | 2026-12-14 | 2027-01-17 | MTP-CON-1010, MTP-CON-1410 FF |  |  | 72d | 20d |  | CON | MTP | MWC | P1 | NONE |  |
| MTP-CON-M142 |  | Ready for commissioning (construction complete) | milestone | 0d | 2027-02-09 | 2027-02-09 | MTP-CON-1135, MTP-CON-1140, MTP-CON-1150, MTP-CON-1210, MTP-CON-1230, MTP-CON-1340, MTP-CON-1430 |  |  | 52d | 0d |  | CON | MTP | MWC | P1 | GIVER | RG1 |
|  | FIT | **Fit-out & Finishes** |  |  | 2026-03-09 | 2027-02-09 |  |  |  |  |  |  |  |  |  |  |  |  |
| MTP-CON-1050 |  | Internal partitions & ceilings |  | 35d | 2026-03-09 A | 2026-04-21 A | MTP-CON-1030, MTP-CON-1040 | 100% |  |  |  |  | CON | MTP | MWC | P1 | NONE |  |
| MTP-CON-1210 |  | Back-of-house fit-out |  | 40d | 2026-10-12 A | 2026-11-26 | MTP-CON-1132 | 38% | 25d | 26d | 4d |  | CON | MTP | MWC | P1 | NONE |  |
| MTP-CON-1220 |  | Front-of-house fit-out & finishes |  | 44d | 2026-10-12 A | 2026-12-01 | MTP-CON-1132, MTP-CON-1320 | 34% | 29d | 22d | 0d |  | CON | MTP | MWC | P1 | NONE |  |
| MTP-CON-1225 |  | FOH final finishes & joinery |  | 40d | 2026-12-02 | 2027-01-17 | MTP-CON-1150, MTP-CON-1220 |  |  | 52d | 0d |  | CON | MTP | MWC | P1 | NONE |  |
| MTP-CON-1230 |  | Signage & wayfinding |  | 20d | 2027-01-18 | 2027-02-09 | MTP-CON-1225 |  |  | 52d | 0d |  | CON | MTP | MWC | P1 | NONE |  |
|  | MEP | **MEP Installation** |  |  | 2026-01-17 | 2026-11-21 |  |  |  |  |  |  |  |  |  |  |  |  |
| MTP-CON-1110 |  | MEP first fix - lower levels |  | 44d | 2026-01-17 A | 2026-03-08 A | MTP-CON-1020 | 100% |  |  |  |  | CON | MTP | MEP | P1 | NONE |  |
| MTP-CON-1112 |  | MEP first fix - upper levels & roof plant |  | 40d | 2026-03-09 A | 2026-04-27 A | MTP-CON-1110 | 100% |  |  |  |  | CON | MTP | MEP | P1 | NONE |  |
| MTP-CON-1105 |  | Long-lead MEP plant procurement & delivery |  | 44d | 2026-04-04 A | 2026-05-24 A | PRG-D1R-M000 | 100% |  |  |  | start on or after 2026-04-04 | CON | MTP | MEP | P1 | NONE |  |
| MTP-CON-1120 |  | Main plant installation (chillers, switchgear, AHUs) |  | 35d | 2026-05-25 A | 2026-07-08 A | MTP-CON-1030, MTP-CON-1105 | 100% |  |  |  |  | CON | MTP | MEP | P1 | NONE |  |
| MTP-CON-1131 |  | MEP second fix - Zone A |  | 40d | 2026-07-09 A | 2026-08-24 A | MTP-CON-1050, MTP-CON-1112, MTP-CON-1120 | 100% |  |  |  |  | CON | MTP | MEP | P1 | NONE |  |
| MTP-CON-1132 |  | MEP second fix - Zone B |  | 40d | 2026-08-25 A | 2026-10-11 A | MTP-CON-1131 | 100% |  |  |  |  | CON | MTP | MEP | P1 | NONE |  |
| MTP-CON-1140 |  | BMS & ELV installation |  | 35d | 2026-08-25 A | 2026-10-05 A | MTP-CON-1120, MTP-CON-1131 | 100% |  |  |  |  | CON | MTP | MEP | P1 | NONE |  |
| MTP-CON-1135 |  | MEP second fix - Zone C (BOH & plant rooms) |  | 35d | 2026-09-12 A | 2026-10-22 A | MTP-CON-1132 SS+15d | 100% |  |  |  |  | CON | MTP | MEP | P1 | NONE |  |
| MTP-CON-1150 |  | Vertical transportation installation |  | 35d | 2026-10-12 A | 2026-11-21 | MTP-CON-1132 | 43% | 20d | 61d | 9d |  | CON | MTP | MEP | P1 | NONE |  |
|  | MGT | **Management & Supervision** |  |  | 2025-10-11 | 2027-02-09 |  |  |  |  |  |  |  |  |  |  |  |  |
| MTP-CON-9010 |  | Construction supervision & site management (LOE) | level of effort | 410d | 2025-10-11 A | 2027-02-09 | MTP-CON-1010 SS, MTP-CON-M142 FF | 78% | 89d | 52d |  |  | CON | MTP | PMO | P1 | NONE |  |

| ID | WBS | Activity | Type | Duration | Start | Finish | Predecessors | Complete | Remaining | Total float | Free float | Constraint | Calendar | Workstream | Asset | Owner | Phase | Interface | Readiness Gate |
| --- | --- | --- | --- | --- | --- | --- | --- | --- | --- | --- | --- | --- | --- | --- | --- | --- | --- | --- | --- |
|  | STR | **Structure & Envelope** |  |  | 2025-10-11 | 2026-03-08 |  |  |  |  |  |  |  |  |  |  |  |  |  |
| MTP-CON-1010 |  | Substructure & foundations |  | 40d | 2025-10-11 A | 2025-11-25 A | PRG-D1R-M000 | 100% |  |  |  | start on or after 2025-10-11 |  | CON | MTP | MWC | P1 | NONE |  |
| MTP-CON-1020 |  | Superstructure frame |  | 44d | 2025-11-26 A | 2026-01-15 A | MTP-CON-1010 | 100% |  |  |  |  |  | CON | MTP | MWC | P1 | NONE |  |
| MTP-CON-1030 |  | Roof structure & roofing |  | 40d | 2026-01-17 A | 2026-03-03 A | MTP-CON-1020 | 100% |  |  |  |  |  | CON | MTP | MWC | P1 | NONE |  |
| MTP-CON-1040 |  | Building envelope & facade |  | 44d | 2026-01-17 A | 2026-03-08 A | MTP-CON-1020 | 100% |  |  |  |  |  | CON | MTP | MWC | P1 | NONE |  |
|  | SYS | **Specialist Systems** |  |  | 2026-03-04 | 2026-12-03 |  |  |  |  |  |  |  |  |  |  |  |  |  |
| MTP-CON-1310 |  | Ride systems installation (all rides) |  | 114d | 2026-03-04 A | 2026-07-22 A | MTP-CON-1030 | 100% |  |  |  |  |  | CON | MTP | MEP | P1 | NONE |  |
| MTP-CON-1320 |  | Ride control systems & ride enclosures |  | 40d | 2026-07-23 A | 2026-09-07 A | MTP-CON-1310 | 100% |  |  |  |  |  | CON | MTP | MEP | P1 | NONE |  |
| MTP-CON-1330 |  | Theming & show elements |  | 44d | 2026-09-08 A | 2026-10-29 | MTP-CON-1320 | 98% | 1d | 54d | 0d |  |  | CON | MTP | MWC | P1 | NONE |  |
| MTP-CON-1340 |  | Ride & show control integration |  | 30d | 2026-10-31 | 2026-12-03 | MTP-CON-1330 |  |  | 54d | 32d |  |  | CON | MTP | MEP | P1 | NONE |  |
|  | TNC | **Testing & Commissioning** |  |  | 2026-12-02 | 2027-04-05 |  |  |  |  |  |  |  |  |  |  |  |  |  |
|  | COM | **Systems Commissioning** |  |  | 2026-12-22 | 2027-03-21 |  |  |  |  |  |  |  |  |  |  |  |  |  |
| MTP-TNC-2120 |  | Electrical systems commissioning |  | 20d | 2026-12-22 | 2027-01-10 | MTP-TNC-2010 |  |  | 26d | 0d |  | DOP 7-Day T&C / Trials | TNC | MTP | MEP | P2 | NONE |  |
| MTP-TNC-2130 |  | Fire & life safety systems commissioning |  | 25d | 2027-01-11 | 2027-02-04 | MTP-TNC-2120 |  |  | 71d | 45d |  | DOP 7-Day T&C / Trials | TNC | MTP | MEP | P2 | NONE |  |
| MTP-TNC-2140 |  | Ride testing & commissioning (static & dynamic) |  | 40d | 2027-01-11 | 2027-02-19 | MTP-CON-1340, MTP-TNC-2120 |  |  | 26d | 0d |  | DOP 7-Day T&C / Trials | TNC | MTP | MEP | P2 | NONE |  |
| MTP-TNC-2160 |  | Vertical transportation testing & certification |  | 10d | 2027-01-11 | 2027-01-20 | MTP-CON-1150, MTP-TNC-2120 |  |  | 86d | 60d |  | DOP 7-Day T&C / Trials | TNC | MTP | MEP | P2 | NONE |  |
| MTP-TNC-2110 |  | HVAC & chilled water commissioning |  | 25d | 2027-01-13 | 2027-02-06 | MTP-TNC-2010, PEW-TNC-M041 |  |  | 34d | 0d |  | DOP 7-Day T&C / Trials | TNC | MTP | MEP | P2 | RECEIVER |  |
| MTP-TNC-2150 |  | BMS & ELV commissioning |  | 20d | 2027-02-07 | 2027-02-26 | MTP-TNC-2110 |  |  | 34d | 0d |  | DOP 7-Day T&C / Trials | TNC | MTP | MEP | P2 | NONE |  |
| MTP-TNC-2145 |  | Ride cycle testing & third-party certification |  | 30d | 2027-02-20 | 2027-03-21 | MTP-TNC-2140 |  |  | 26d | 0d |  | DOP 7-Day T&C / Trials | TNC | MTP | ICA | P2 | NONE |  |
| MTP-TNC-2170 |  | Security systems (CCTV, access control) commissioning |  | 15d | 2027-02-27 | 2027-03-13 | MTP-TNC-2150 |  |  | 34d | 8d |  | DOP 7-Day T&C / Trials | TNC | MTP | SSY | P2 | NONE |  |
|  | IST | **Integrated Systems Testing** |  |  | 2027-03-22 | 2027-04-05 |  |  |  |  |  |  |  |  |  |  |  |  |  |
| MTP-TNC-2210 |  | Integrated systems test (IST) |  | 15d | 2027-03-22 | 2027-04-05 | MTP-CON-M142, MTP-TNC-2130, MTP-TNC-2145, MTP-TNC-2150, MTP-TNC-2160, MTP-TNC-2170 |  |  | 26d | 0d |  | DOP 7-Day T&C / Trials | TNC | MTP | ICA | P2 | RECEIVER |  |
| MTP-TNC-M220 |  | T&C complete (ICA certificate) | milestone | 0d | 2027-04-05 | 2027-04-05 | MTP-TNC-2210 |  |  | 26d | 0d |  | DOP 7-Day T&C / Trials | TNC | MTP | ICA | P2 | GIVER | RG2 |
|  | PRE | **Pre-commissioning** |  |  | 2026-12-02 | 2026-12-21 |  |  |  |  |  |  |  |  |  |  |  |  |  |
| MTP-TNC-2010 |  | Pre-commissioning checks (electrical & mechanical) |  | 20d | 2026-12-02 | 2026-12-21 | MTP-CON-1132, MTP-CON-1135, MTP-CON-1140, MTP-CON-1210, MTP-CON-1220, PEW-TNC-M021 |  |  | 26d | 0d |  | DOP 7-Day T&C / Trials | TNC | MTP | MEP | P2 | RECEIVER |  |

| ID | WBS | Activity | Type | Duration | Start | Finish | Predecessors | Complete | Remaining | Total float | Free float | Constraint | Calendar | Workstream | Asset | Owner | Phase | Interface | Readiness Gate |
| --- | --- | --- | --- | --- | --- | --- | --- | --- | --- | --- | --- | --- | --- | --- | --- | --- | --- | --- | --- |
|  | HOV | **Handover** |  |  | 2027-02-10 | 2027-05-31 |  |  |  |  |  |  |  |  |  |  |  |  |  |
|  | APR | **Authority Inspections & Approvals** |  |  | 2027-04-06 | 2027-05-31 |  |  |  |  |  |  |  |  |  |  |  |  |  |
| MTP-HOV-3110 |  | Civil defence & fire authority inspection |  | 15d | 2027-04-06 | 2027-04-26 | MTP-TNC-M220 |  |  | 18d | 0d |  | DOP 5-Day Office (Sun-Thu) | HOV | MTP | AAT | P3 | RECEIVER |  |
| MTP-HOV-3120 |  | Completion certificate application & review |  | 20d | 2027-04-27 | 2027-05-31 | MTP-HOV-3010, MTP-HOV-3110 |  |  | 18d | 0d |  | DOP 5-Day Office (Sun-Thu) | HOV | MTP | AAT | P3 | NONE |  |
| MTP-HOV-M130 |  | Occupancy certificate issued | milestone | 0d | 2027-05-31 | 2027-05-31 | MTP-HOV-3120 |  |  | 18d | 0d |  | DOP 5-Day Office (Sun-Thu) | HOV | MTP | AAT | P3 | GIVER |  |
|  | HND | **Completion & Handover** |  |  | 2027-03-18 | 2027-05-31 |  |  |  |  |  |  |  |  |  |  |  |  |  |
| MTP-HOV-3220 |  | Defects walkdown with operator |  | 5d | 2027-03-18 | 2027-03-23 | MTP-HOV-3010 FS-3d |  |  | 123d | 54d |  |  | HOV | MTP | OPR | P3 | NONE |  |
| MTP-HOV-3210 |  | Handover documentation (O&M, as-builts, warranties) |  | 25d | 2027-04-06 | 2027-05-10 | MTP-TNC-M220 |  |  | 68d | 10d |  | DOP 5-Day Office (Sun-Thu) | HOV | MTP | MWC | P3 | NONE |  |
| MTP-HOV-M230 |  | Handover to operator | milestone | 0d | 2027-05-31 | 2027-05-31 | MTP-HOV-3210, MTP-HOV-3220, MTP-HOV-M130 |  |  | 69d | 50d |  |  | HOV | MTP | PMO | P3 | GIVER | RG3 |
|  | SNG | **Snagging & Defects** |  |  | 2027-02-10 | 2027-03-21 |  |  |  |  |  |  |  |  |  |  |  |  |  |
| MTP-HOV-3010 |  | Snagging & defects rectification |  | 30d | 2027-02-10 | 2027-03-21 | MTP-CON-M142 |  |  | 54d | 0d |  |  | HOV | MTP | MWC | P3 | NONE |  |
|  | OPM | **Operator Mobilisation & Training** |  |  | 2026-10-18 | 2027-07-28 |  |  |  |  |  |  |  |  |  |  |  |  |  |
|  | RCT | **Recruitment & Onboarding** |  |  | 2026-10-18 | 2027-04-21 |  |  |  |  |  |  |  |  |  |  |  |  |  |
| MTP-OPM-4010 |  | Recruitment wave 1 (leadership & technical) |  | 40d | 2026-10-18 A | 2026-12-10 | PRG-OPM-4010 SS+20d | 22% | 31d | 41d | 0d | start on or after 2026-10-18 | DOP 5-Day Office (Sun-Thu) | OPM | MTP | OPR | P4 | NONE |  |
| MTP-OPM-4015 |  | Recruitment wave 2 (front-line staff) |  | 40d | 2026-12-13 | 2027-02-04 | MTP-OPM-4010 |  |  | 41d | 0d |  | DOP 5-Day Office (Sun-Thu) | OPM | MTP | OPR | P4 | NONE |  |
| MTP-OPM-4020 |  | Onboarding & induction |  | 20d | 2027-02-07 | 2027-03-07 | MTP-OPM-4015 |  |  | 41d | 0d |  | DOP 5-Day Office (Sun-Thu) | OPM | MTP | OPR | P4 | NONE |  |
| MTP-OPM-4030 |  | Uniforms, IT & systems provisioning |  | 30d | 2027-03-08 | 2027-04-21 | MTP-OPM-4020 |  |  | 41d | 23d |  | DOP 5-Day Office (Sun-Thu) | OPM | MTP | FMS | P4 | NONE |  |
|  | TRN | **Training & Familiarisation** |  |  | 2027-03-08 | 2027-07-28 |  |  |  |  |  |  |  |  |  |  |  |  |  |
| MTP-OPM-4110 |  | Classroom & simulator training |  | 30d | 2027-03-08 | 2027-04-21 | MTP-OPM-4020 |  |  | 41d | 23d |  | DOP 5-Day Office (Sun-Thu) | OPM | MTP | OPR | P4 | NONE |  |
| MTP-OPM-M120 |  | Operator site access granted | milestone | 0d | 2027-04-06 | 2027-04-06 | MTP-TNC-M220 |  |  | 64d | 43d | start on or after 2027-03-06 |  | OPM | MTP | SSY | P4 | RECEIVER |  |
| MTP-OPM-4130 |  | On-site familiarisation & equipment training |  | 30d | 2027-06-01 | 2027-06-30 | MTP-HOV-M130, MTP-OPM-4030, MTP-OPM-4110, MTP-OPM-M120 |  |  | 24d | 0d |  | DOP 7-Day T&C / Trials | OPM | MTP | OPR | P4 | RECEIVER |  |
| MTP-OPM-4140 |  | SOPs & emergency procedures validated |  | 20d | 2027-07-01 | 2027-07-28 | MTP-OPM-4130 |  |  | 16d | 0d |  | DOP 5-Day Office (Sun-Thu) | OPM | MTP | SSY | P4 | NONE |  |
| MTP-OPM-M150 |  | Operator trained & certified | milestone | 0d | 2027-07-28 | 2027-07-28 | MTP-OPM-4140 |  |  | 16d | 0d |  | DOP 5-Day Office (Sun-Thu) | OPM | MTP | OPR | P4 | NONE | RG3 |
|  | OTE | **Operational Trials & Test Events** |  |  | 2027-07-29 | 2027-09-05 |  |  |  |  |  |  |  |  |  |  |  |  |  |
|  | TEV | **Test Events** |  |  | 2027-08-23 | 2027-09-05 |  |  |  |  |  |  |  |  |  |  |  |  |  |
| MTP-OTE-5110 |  | Test events (invited guests) |  | 14d | 2027-08-23 | 2027-09-05 | MTP-HOV-M130, MTP-OTE-5020, MTP-OTE-5030 |  |  | 22d | 0d |  | DOP 7-Day T&C / Trials | OTE | MTP | OPR | P4 | NONE |  |

| ID | WBS | Activity | Type | Duration | Start | Finish | Predecessors | Complete | Remaining | Total float | Free float | Constraint | Calendar | Workstream | Asset | Owner | Phase | Interface | Readiness Gate |
| --- | --- | --- | --- | --- | --- | --- | --- | --- | --- | --- | --- | --- | --- | --- | --- | --- | --- | --- | --- |
|  | TRL | **Operational Trials** |  |  | 2027-07-29 | 2027-08-22 |  |  |  |  |  |  |  |  |  |  |  |  |  |
| MTP-OTE-5010 |  | Operational trials (technical rehearsals) |  | 20d | 2027-07-29 | 2027-08-17 | MTP-HOV-M230, MTP-OPM-M150 |  |  | 22d | 0d |  | DOP 7-Day T&C / Trials | OTE | MTP | OPR | P4 | RECEIVER |  |
| MTP-OTE-5030 |  | Ticketing & POS systems trial |  | 7d | 2027-08-01 | 2027-08-07 | MTP-OPM-4030, MTP-OTE-5010 SS+3d, PRG-OTE-5010 |  |  | 37d | 15d |  | DOP 7-Day T&C / Trials | OTE | MTP | OPR | P4 | NONE |  |
| MTP-OTE-5020 |  | Emergency drills with civil defence |  | 5d | 2027-08-18 | 2027-08-22 | MTP-OTE-5010 |  |  | 22d | 0d |  | DOP 7-Day T&C / Trials | OTE | MTP | SSY | P4 | NONE |  |
|  | D1R | **Day 1 Readiness** |  |  | 2027-09-06 | 2027-09-14 |  |  |  |  |  |  |  |  |  |  |  |  |  |
|  | GAT | **Readiness Gates** |  |  | 2027-09-06 | 2027-09-14 |  |  |  |  |  |  |  |  |  |  |  |  |  |
| MTP-D1R-6010 |  | Operational readiness assessment |  | 7d | 2027-09-06 | 2027-09-14 | MTP-OTE-5110 |  |  | 16d | 0d |  | DOP 5-Day Office (Sun-Thu) | D1R | MTP | PMO | P5 | NONE |  |
| MTP-D1R-M020 |  | Asset Day 1 ready | milestone | 0d | 2027-09-14 | 2027-09-14 | MTP-D1R-6010 |  |  | 24d |  |  | DOP 7-Day T&C / Trials | D1R | MTP | PMO | P5 | GIVER | RG4 |
|  | LWP | **Lagoon Water Park** |  |  | 2026-01-31 | 2027-09-14 |  |  |  |  |  |  |  |  |  |  |  |  |  |
|  | CON | **Construction** |  |  | 2026-01-31 | 2027-03-30 |  |  |  |  |  |  |  |  |  |  |  |  |  |
|  | EXT | **External Works** |  |  | 2027-01-16 | 2027-03-30 |  |  |  |  |  |  |  |  |  |  |  |  |  |
| LWP-CON-1410 |  | External works & landscaping |  | 40d | 2027-01-16 | 2027-03-03 | LWP-CON-1040, LWP-CON-1220 |  |  | 48d | 0d |  |  | CON | LWP | MWC | P1 | NONE |  |
| LWP-CON-1430 |  | Car parks & drop-off |  | 30d | 2027-01-27 | 2027-03-03 | LWP-CON-1010, LWP-CON-1410 FF |  |  | 48d | 20d |  |  | CON | LWP | MWC | P1 | NONE |  |
| LWP-CON-M142 |  | Ready for commissioning (construction complete) | milestone | 0d | 2027-03-30 | 2027-03-30 | LWP-CON-1135, LWP-CON-1140, LWP-CON-1150, LWP-CON-1210, LWP-CON-1230, LWP-CON-1340, LWP-CON-1430 |  |  | 28d | 0d |  |  | CON | LWP | MWC | P1 | GIVER | RG1 |
|  | FIT | **Fit-out & Finishes** |  |  | 2026-07-07 | 2027-03-30 |  |  |  |  |  |  |  |  |  |  |  |  |  |
| LWP-CON-1050 |  | Internal partitions & ceilings |  | 35d | 2026-07-07 A | 2026-08-16 A | LWP-CON-1030, LWP-CON-1040 | 100% |  |  |  |  |  | CON | LWP | MWC | P1 | NONE |  |
| LWP-CON-1210 |  | Back-of-house fit-out |  | 40d | 2026-11-25 | 2027-01-10 | LWP-CON-1132 |  |  | 28d | 4d |  |  | CON | LWP | MWC | P1 | NONE |  |
| LWP-CON-1220 |  | Front-of-house fit-out & finishes |  | 44d | 2026-11-25 | 2027-01-14 | LWP-CON-1132 |  |  | 24d | 0d |  |  | CON | LWP | MWC | P1 | NONE |  |
| LWP-CON-1225 |  | FOH final finishes & joinery |  | 40d | 2027-01-16 | 2027-03-03 | LWP-CON-1150, LWP-CON-1220 |  |  | 28d | 0d |  |  | CON | LWP | MWC | P1 | NONE |  |
| LWP-CON-1230 |  | Signage & wayfinding |  | 20d | 2027-03-04 | 2027-03-30 | LWP-CON-1225 |  |  | 28d | 0d |  |  | CON | LWP | MWC | P1 | NONE |  |
|  | MEP | **MEP Installation** |  |  | 2026-05-02 | 2027-01-04 |  |  |  |  |  |  |  |  |  |  |  |  |  |
| LWP-CON-1105 |  | Long-lead MEP plant procurement & delivery |  | 44d | 2026-05-02 A | 2026-06-25 A | PRG-D1R-M000 | 100% |  |  |  | start on or after 2026-05-02 |  | CON | LWP | MEP | P1 | NONE |  |
| LWP-CON-1110 |  | MEP first fix - lower levels |  | 44d | 2026-05-12 A | 2026-07-06 A | LWP-CON-1020 | 100% |  |  |  |  |  | CON | LWP | MEP | P1 | NONE |  |
| LWP-CON-1120 |  | Main plant installation (chillers, switchgear, AHUs) |  | 35d | 2026-07-02 A | 2026-08-11 A | LWP-CON-1030, LWP-CON-1105 | 100% |  |  |  |  |  | CON | LWP | MEP | P1 | NONE |  |
| LWP-CON-1112 |  | MEP first fix - upper levels & roof plant |  | 40d | 2026-07-07 A | 2026-08-22 A | LWP-CON-1110 | 100% |  |  |  |  |  | CON | LWP | MEP | P1 | NONE |  |
| LWP-CON-1131 |  | MEP second fix - Zone A |  | 40d | 2026-08-23 A | 2026-10-08 A | LWP-CON-1050, LWP-CON-1112, LWP-CON-1120 | 100% |  |  |  |  |  | CON | LWP | MEP | P1 | NONE |  |
| LWP-CON-1132 |  | MEP second fix - Zone B |  | 40d | 2026-10-10 A | 2026-11-24 | LWP-CON-1131 | 43% | 23d | 24d | -15d |  |  | CON | LWP | MEP | P1 | NONE |  |
| LWP-CON-1140 |  | BMS & ELV installation |  | 35d | 2026-10-10 A | 2026-11-18 | LWP-CON-1120, LWP-CON-1131 | 49% | 18d | 73d | 49d |  |  | CON | LWP | MEP | P1 | NONE |  |
| LWP-CON-1135 |  | MEP second fix - Zone C (BOH & plant rooms) |  | 35d | 2026-10-27 A | 2026-12-06 | LWP-CON-1132 SS+15d | 6% | 33d | 58d | 34d |  |  | CON | LWP | MEP | P1 | NONE |  |
| LWP-CON-1150 |  | Vertical transportation installation |  | 35d | 2026-11-25 | 2027-01-04 | LWP-CON-1132 |  |  | 37d | 9d |  |  | CON | LWP | MEP | P1 | NONE |  |

| ID | WBS | Activity | Type | Duration | Start | Finish | Predecessors | Complete | Remaining | Total float | Free float | Constraint | Calendar | Workstream | Asset | Owner | Phase | Interface | Readiness Gate |
| --- | --- | --- | --- | --- | --- | --- | --- | --- | --- | --- | --- | --- | --- | --- | --- | --- | --- | --- | --- |
|  | MGT | **Management & Supervision** |  |  | 2026-01-31 | 2027-03-30 |  |  |  |  |  |  |  |  |  |  |  |  |  |
| LWP-CON-9010 |  | Construction supervision & site management (LOE) | level of effort | 352d | 2026-01-31 A | 2027-03-30 | LWP-CON-1010 SS, LWP-CON-M142 FF | 64% | 127d | 28d |  |  |  | CON | LWP | PMO | P1 | NONE |  |
|  | STR | **Structure & Envelope** |  |  | 2026-01-31 | 2026-07-06 |  |  |  |  |  |  |  |  |  |  |  |  |  |
| LWP-CON-1010 |  | Substructure & foundations |  | 40d | 2026-01-31 A | 2026-03-17 A | PRG-D1R-M000 | 100% |  |  |  | start on or after 2026-01-31 |  | CON | LWP | MWC | P1 | NONE |  |
| LWP-CON-1020 |  | Superstructure frame |  | 44d | 2026-03-18 A | 2026-05-11 A | LWP-CON-1010 | 100% |  |  |  |  |  | CON | LWP | MWC | P1 | NONE |  |
| LWP-CON-1030 |  | Roof structure & roofing |  | 40d | 2026-05-12 A | 2026-07-01 A | LWP-CON-1020 | 100% |  |  |  |  |  | CON | LWP | MWC | P1 | NONE |  |
| LWP-CON-1040 |  | Building envelope & facade |  | 44d | 2026-05-12 A | 2026-07-06 A | LWP-CON-1020 | 100% |  |  |  |  |  | CON | LWP | MWC | P1 | NONE |  |
|  | SYS | **Specialist Systems** |  |  | 2026-08-23 | 2027-02-13 |  |  |  |  |  |  |  |  |  |  |  |  |  |
| LWP-CON-1310 |  | Slide towers & flumes installation |  | 44d | 2026-08-23 A | 2026-10-13 A | LWP-CON-1112 | 100% |  |  |  |  |  | CON | LWP | MEP | P1 | NONE |  |
| LWP-CON-1320 |  | Water treatment & filtration plant installation |  | 40d | 2026-10-14 A | 2026-11-29 | LWP-CON-1310 | 32% | 27d | 29d | 0d |  |  | CON | LWP | MEP | P1 | NONE |  |
| LWP-CON-1330 |  | Pool finishes & water features |  | 35d | 2026-11-30 | 2027-01-09 | LWP-CON-1320 |  |  | 29d | 0d |  |  | CON | LWP | MWC | P1 | NONE |  |
| LWP-CON-1340 |  | Slide & attraction control integration |  | 30d | 2027-01-10 | 2027-02-13 | LWP-CON-1330 |  |  | 29d | 8d |  |  | CON | LWP | MEP | P1 | NONE |  |
|  | TNC | **Testing & Commissioning** |  |  | 2027-01-15 | 2027-04-24 |  |  |  |  |  |  |  |  |  |  |  |  |  |
|  | COM | **Systems Commissioning** |  |  | 2027-02-04 | 2027-04-09 |  |  |  |  |  |  |  |  |  |  |  |  |  |
| LWP-TNC-2110 |  | HVAC & chilled water commissioning |  | 25d | 2027-02-04 | 2027-02-28 | LWP-TNC-2010, PEW-TNC-M041 |  |  | 33d | 0d |  | DOP 7-Day T&C / Trials | TNC | LWP | MEP | P2 | RECEIVER |  |
| LWP-TNC-2120 |  | Electrical systems commissioning |  | 20d | 2027-02-04 | 2027-02-23 | LWP-TNC-2010 |  |  | 28d | 0d |  | DOP 7-Day T&C / Trials | TNC | LWP | MEP | P2 | NONE |  |
| LWP-TNC-2130 |  | Fire & life safety systems commissioning |  | 25d | 2027-02-24 | 2027-03-20 | LWP-TNC-2120 |  |  | 48d | 20d |  | DOP 7-Day T&C / Trials | TNC | LWP | MEP | P2 | NONE |  |
| LWP-TNC-2140 |  | Water treatment & filtration commissioning |  | 25d | 2027-02-24 | 2027-03-20 | LWP-CON-1340, LWP-TNC-2120 |  |  | 28d | 0d |  | DOP 7-Day T&C / Trials | TNC | LWP | MEP | P2 | NONE |  |
| LWP-TNC-2160 |  | Vertical transportation testing & certification |  | 10d | 2027-02-24 | 2027-03-05 | LWP-CON-1150, LWP-TNC-2120 |  |  | 63d | 35d |  | DOP 7-Day T&C / Trials | TNC | LWP | MEP | P2 | NONE |  |
| LWP-TNC-2150 |  | BMS & ELV commissioning |  | 20d | 2027-03-01 | 2027-03-20 | LWP-TNC-2110 |  |  | 33d | 0d |  | DOP 7-Day T&C / Trials | TNC | LWP | MEP | P2 | NONE |  |
| LWP-TNC-2145 |  | Water quality stabilisation & slide testing |  | 20d | 2027-03-21 | 2027-04-09 | LWP-TNC-2140 |  |  | 28d | 0d |  | DOP 7-Day T&C / Trials | TNC | LWP | ICA | P2 | NONE |  |
| LWP-TNC-2170 |  | Security systems (CCTV, access control) commissioning |  | 15d | 2027-03-21 | 2027-04-04 | LWP-TNC-2150 |  |  | 33d | 5d |  | DOP 7-Day T&C / Trials | TNC | LWP | SSY | P2 | NONE |  |
|  | IST | **Integrated Systems Testing** |  |  | 2027-04-10 | 2027-04-24 |  |  |  |  |  |  |  |  |  |  |  |  |  |
| LWP-TNC-2210 |  | Integrated systems test (IST) |  | 15d | 2027-04-10 | 2027-04-24 | LWP-CON-M142, LWP-TNC-2130, LWP-TNC-2145, LWP-TNC-2150, LWP-TNC-2160, LWP-TNC-2170 |  |  | 28d | 0d |  | DOP 7-Day T&C / Trials | TNC | LWP | ICA | P2 | RECEIVER |  |
| LWP-TNC-M220 |  | T&C complete (ICA certificate) | milestone | 0d | 2027-04-24 | 2027-04-24 | LWP-TNC-2210 |  |  | 28d | 0d |  | DOP 7-Day T&C / Trials | TNC | LWP | ICA | P2 | GIVER | RG2 |

| ID | WBS | Activity | Type | Duration | Start | Finish | Predecessors | Total float | Free float | Constraint | Calendar | Workstream | Asset | Owner | Phase | Interface | Readiness Gate |
| --- | --- | --- | --- | --- | --- | --- | --- | --- | --- | --- | --- | --- | --- | --- | --- | --- | --- |
|  | PRE | **Pre-commissioning** |  |  | 2027-01-15 | 2027-02-03 |  |  |  |  |  |  |  |  |  |  |  |
| LWP-TNC-2010 |  | Pre-commissioning checks (electrical & mechanical) |  | 20d | 2027-01-15 | 2027-02-03 | LWP-CON-1132, LWP-CON-1135, LWP-CON-1140, LWP-CON-1210, LWP-CON-1220, PEW-TNC-M021 | 28d | 0d |  | DOP 7-Day T&C / Trials | TNC | LWP | MEP | P2 | RECEIVER |  |
|  | HOV | **Handover** |  |  | 2027-03-31 | 2027-06-17 |  |  |  |  |  |  |  |  |  |  |  |
|  | APR | **Authority Inspections & Approvals** |  |  | 2027-04-25 | 2027-06-17 |  |  |  |  |  |  |  |  |  |  |  |
| LWP-HOV-3110 |  | Civil defence & fire authority inspection |  | 15d | 2027-04-25 | 2027-05-13 | LWP-TNC-M220 | 15d | 0d |  | DOP 5-Day Office (Sun-Thu) | HOV | LWP | AAT | P3 | RECEIVER |  |
| LWP-HOV-3120 |  | Completion certificate application & review |  | 20d | 2027-05-23 | 2027-06-17 | LWP-HOV-3010, LWP-HOV-3110 | 15d | 0d |  | DOP 5-Day Office (Sun-Thu) | HOV | LWP | AAT | P3 | NONE |  |
| LWP-HOV-M130 |  | Occupancy certificate issued | milestone | 0d | 2027-06-17 | 2027-06-17 | LWP-HOV-3120 | 15d | 0d |  | DOP 5-Day Office (Sun-Thu) | HOV | LWP | AAT | P3 | GIVER |  |
|  | HND | **Completion & Handover** |  |  | 2027-05-02 | 2027-06-17 |  |  |  |  |  |  |  |  |  |  |  |
| LWP-HOV-3210 |  | Handover documentation (O&M, as-builts, warranties) |  | 25d | 2027-05-02 | 2027-06-10 |  | 60d | 5d | start on or after 2027-05-02 | DOP 5-Day Office (Sun-Thu) | HOV | LWP | MWC | P3 | NONE |  |
| LWP-HOV-3220 |  | Defects walkdown with operator |  | 5d | 2027-05-05 | 2027-05-10 | LWP-HOV-3010 | 94d | 28d |  |  | HOV | LWP | OPR | P3 | NONE |  |
| LWP-HOV-M230 |  | Handover to operator | milestone | 0d | 2027-06-17 | 2027-06-17 | LWP-HOV-3210, LWP-HOV-3220, LWP-HOV-M130 | 66d | 48d |  |  | HOV | LWP | PMO | P3 | GIVER | RG3 |
|  | SNG | **Snagging & Defects** |  |  | 2027-03-31 | 2027-05-04 |  |  |  |  |  |  |  |  |  |  |  |
| LWP-HOV-3010 |  | Snagging & defects rectification |  | 30d | 2027-03-31 | 2027-05-04 | LWP-CON-M142 | 28d | 0d |  |  | HOV | LWP | MWC | P3 | NONE |  |
|  | OPM | **Operator Mobilisation & Training** |  |  | 2026-11-01 | 2027-08-12 |  |  |  |  |  |  |  |  |  |  |  |
|  | RCT | **Recruitment & Onboarding** |  |  | 2026-11-01 | 2027-05-05 |  |  |  |  |  |  |  |  |  |  |  |
| LWP-OPM-4010 |  | Recruitment wave 1 (leadership & technical) |  | 40d | 2026-11-01 | 2026-12-24 | PRG-OPM-4010 SS+20d | 0d |  | start on or after 2026-11-01 | DOP 5-Day Office (Sun-Thu) | OPM | LWP | OPR | P4 | NONE |  |
| LWP-OPM-4015 |  | Recruitment wave 2 (front-line staff) |  | 40d | 2026-12-27 | 2027-02-18 | LWP-OPM-4010 | 0d |  |  | DOP 5-Day Office (Sun-Thu) | OPM | LWP | OPR | P4 | NONE |  |
| LWP-OPM-4020 |  | Onboarding & induction |  | 20d | 2027-02-21 | 2027-03-24 | LWP-OPM-4015 | 0d |  | mandatory start 2027-02-21 | DOP 5-Day Office (Sun-Thu) | OPM | LWP | OPR | P4 | NONE |  |
| LWP-OPM-4030 |  | Uniforms, IT & systems provisioning |  | 30d | 2027-03-25 | 2027-05-05 | LWP-OPM-4020 | 41d | 26d |  | DOP 5-Day Office (Sun-Thu) | OPM | LWP | FMS | P4 | NONE |  |
|  | TRN | **Training & Familiarisation** |  |  | 2027-03-25 | 2027-08-12 |  |  |  |  |  |  |  |  |  |  |  |
| LWP-OPM-4110 |  | Classroom & simulator training |  | 30d | 2027-03-25 | 2027-05-05 | LWP-OPM-4020 | 41d | 26d |  | DOP 5-Day Office (Sun-Thu) | OPM | LWP | OPR | P4 | NONE |  |
| LWP-OPM-M120 |  | Operator site access granted | milestone | 0d | 2027-04-25 | 2027-04-25 | LWP-TNC-M220 | 60d | 42d |  |  | OPM | LWP | SSY | P4 | RECEIVER |  |
| LWP-OPM-4130 |  | On-site familiarisation & equipment training |  | 30d | 2027-06-18 | 2027-07-17 | LWP-HOV-M130, LWP-OPM-4030, LWP-OPM-4110, LWP-OPM-M120 | 21d | 0d |  | DOP 7-Day T&C / Trials | OPM | LWP | OPR | P4 | RECEIVER |  |
| LWP-OPM-4140 |  | SOPs & emergency procedures validated |  | 20d | 2027-07-18 | 2027-08-12 | LWP-OPM-4130 | 15d | 0d |  | DOP 5-Day Office (Sun-Thu) | OPM | LWP | SSY | P4 | NONE |  |
| LWP-OPM-M150 |  | Operator trained & certified | milestone | 0d | 2027-08-12 | 2027-08-12 | LWP-OPM-4140 | 15d | 0d |  | DOP 5-Day Office (Sun-Thu) | OPM | LWP | OPR | P4 | NONE | RG3 |

| ID | WBS | Activity | Type | Duration | Start | Finish | Predecessors | Complete | Planned start | Planned finish | Total float | Free float | Calendar | Workstream | Asset | Owner | Phase | Interface | Readiness Gate |
| --- | --- | --- | --- | --- | --- | --- | --- | --- | --- | --- | --- | --- | --- | --- | --- | --- | --- | --- | --- |
|  | OTE | **Operational Trials & Test Events** |  |  | 2027-08-13 | 2027-09-06 |  |  |  |  |  |  |  |  |  |  |  |  |  |
|  | TEV | **Test Events** |  |  | 2027-08-23 | 2027-09-05 |  |  |  |  |  |  |  |  |  |  |  |  |  |
| LWP-OTE-5110 |  | Test events (invited guests) |  | 14d | 2027-08-23 | 2027-09-05 | LWP-HOV-M130, LWP-OTE-5020 SF, LWP-OTE-5030 |  |  |  | 22d | 0d | DOP 7-Day T&C / Trials | OTE | LWP | OPR | P4 | NONE |  |
|  | TRL | **Operational Trials** |  |  | 2027-08-13 | 2027-09-06 |  |  |  |  |  |  |  |  |  |  |  |  |  |
| LWP-OTE-5010 |  | Operational trials (technical rehearsals) |  | 20d | 2027-08-13 | 2027-09-01 | LWP-HOV-M230, LWP-OPM-M150 |  |  |  | 22d | 0d | DOP 7-Day T&C / Trials | OTE | LWP | OPR | P4 | RECEIVER |  |
| LWP-OTE-5030 |  | Ticketing & POS systems trial |  | 7d | 2027-08-16 | 2027-08-22 | LWP-OPM-4030, LWP-OTE-5010 SS+3d, PRG-OTE-5010 |  |  |  | 22d | 0d | DOP 7-Day T&C / Trials | OTE | LWP | OPR | P4 | NONE |  |
| LWP-OTE-5020 |  | Emergency drills with civil defence |  | 5d | 2027-09-02 | 2027-09-06 | LWP-OTE-5010 |  |  |  | 26d | 4d | DOP 7-Day T&C / Trials | OTE | LWP | SSY | P4 | NONE |  |
|  | D1R | **Day 1 Readiness** |  |  | 2027-09-06 | 2027-09-14 |  |  |  |  |  |  |  |  |  |  |  |  |  |
|  | GAT | **Readiness Gates** |  |  | 2027-09-06 | 2027-09-14 |  |  |  |  |  |  |  |  |  |  |  |  |  |
| LWP-D1R-6010 |  | Operational readiness assessment |  | 7d | 2027-09-06 | 2027-09-14 | LWP-OTE-5110 |  |  |  | 16d | 0d | DOP 5-Day Office (Sun-Thu) | D1R | LWP | PMO | P5 | NONE |  |
| LWP-D1R-M020 |  | Asset Day 1 ready | milestone | 0d | 2027-09-14 | 2027-09-14 | LWP-D1R-6010 |  |  |  | 24d |  | DOP 7-Day T&C / Trials | D1R | LWP | PMO | P5 | GIVER | RG4 |
|  | DAR | **Dune Arena** |  |  | 2026-01-17 | 2027-10-14 |  |  |  |  |  |  |  |  |  |  |  |  |  |
|  | CON | **Construction** |  |  | 2026-01-17 | 2027-04-20 |  |  |  |  |  |  |  |  |  |  |  |  |  |
|  | EXT | **External Works** |  |  | 2027-01-20 | 2027-04-20 |  |  |  |  |  |  |  |  |  |  |  |  |  |
| DAR-CON-1410 |  | External works & landscaping |  | 40d | 2027-01-20 | 2027-03-08 | DAR-CON-1040 FS+30d, DAR-CON-1220 |  | 2026-12-29 | 2027-02-13 | 30d | 0d |  | CON | DAR | MWC | P1 | NONE |  |
| DAR-CON-1430 |  | Car parks & drop-off |  | 30d | 2027-02-01 | 2027-03-08 | DAR-CON-1010, DAR-CON-1410 FF |  | 2027-01-10 | 2027-02-13 | 30d |  |  | CON | DAR | MWC | P1 | NONE |  |
| DAR-CON-M142 |  | Ready for commissioning (construction complete) | milestone | 0d | 2027-04-20 | 2027-04-20 | DAR-CON-1135, DAR-CON-1140, DAR-CON-1150, DAR-CON-1210, DAR-CON-1230, DAR-CON-1340, DAR-CON-1430 |  | 2027-03-30 | 2027-03-30 | -4d |  |  | CON | DAR | MWC | P1 | GIVER | RG1 |
|  | FIT | **Fit-out & Finishes** |  |  | 2026-06-23 | 2027-04-20 |  |  |  |  |  |  |  |  |  |  |  |  |  |
| DAR-CON-1050 |  | Internal partitions & ceilings |  | 35d | 2026-06-23 A | 2026-08-02 A | DAR-CON-1030, DAR-CON-1040 | 100% |  |  |  |  |  | CON | DAR | MWC | P1 | NONE |  |
| DAR-CON-1240 |  | Additional acoustic treatment - seating bowl |  | 15d | 2026-10-08 A | 2026-10-25 A | DAR-CON-1131 | 100% | 2026-10-04 | 2026-10-20 |  |  |  | CON | DAR | MWC | P1 | NONE |  |
| DAR-CON-1210 |  | Back-of-house fit-out |  | 40d | 2026-11-21 | 2027-01-05 | DAR-CON-1132 |  | 2026-11-19 | 2027-01-04 | 26d | 12d |  | CON | DAR | MWC | P1 | NONE |  |
| DAR-CON-1220 |  | Front-of-house fit-out & finishes |  | 44d | 2026-11-30 | 2027-01-19 | DAR-CON-1132 FF+10d, DAR-CON-1132 SS+30d, DAR-CON-1240, DAR-CON-1250 |  | 2026-11-08 | 2026-12-28 | -4d |  |  | CON | DAR | MWC | P1 | NONE |  |
| DAR-CON-1225 |  | FOH final finishes & joinery |  | 44d | 2027-01-20 | 2027-03-16 | DAR-CON-1150, DAR-CON-1220 |  | 2026-12-30 | 2027-02-18 | -4d |  |  | CON | DAR | MWC | P1 | NONE |  |
| DAR-CON-1230 |  | Signage & wayfinding |  | 30d | 2027-03-17 | 2027-04-20 | DAR-CON-1225 |  | 2027-02-20 | 2027-03-30 | -4d |  |  | CON | DAR | MWC | P1 | NONE |  |

| ID | WBS | Activity | Type | Duration | Start | Finish | Predecessors | Complete | Remaining | Planned start | Planned finish | Total float | Free float | Constraint | Calendar | Workstream | Asset | Owner | Phase | Interface |
| --- | --- | --- | --- | --- | --- | --- | --- | --- | --- | --- | --- | --- | --- | --- | --- | --- | --- | --- | --- | --- |
|  | MEP | **MEP Installation** |  |  | 2026-04-04 | 2026-12-30 |  |  |  |  |  |  |  |  |  |  |  |  |  |  |
| DAR-CON-1105 |  | Long-lead MEP plant procurement & delivery |  | 56d | 2026-04-04 A | 2026-06-11 A | PRG-D1R-M000 | 100% |  |  |  |  |  | start on or after 2026-04-04 |  | CON | DAR | MEP | P1 | NONE |
| DAR-CON-1110 |  | MEP first fix - lower levels |  | 52d | 2026-04-28 A | 2026-07-01 A | DAR-CON-1020 | 100% |  |  |  |  |  |  |  | CON | DAR | MEP | P1 | NONE |
| DAR-CON-1112 |  | MEP first fix - upper levels & roof plant |  | 50d | 2026-06-13 A | 2026-08-16 A | DAR-CON-1110 | 100% |  |  |  |  |  |  |  | CON | DAR | MEP | P1 | NONE |
| DAR-CON-1120 |  | Main plant installation (chillers, switchgear, AHUs) |  | 45d | 2026-06-23 A | 2026-08-13 A | DAR-CON-1030, DAR-CON-1105 | 100% |  |  |  |  |  |  |  | CON | DAR | MEP | P1 | NONE |
| DAR-CON-1131 |  | MEP second fix - Zone A |  | 44d | 2026-08-17 A | 2026-10-07 A | DAR-CON-1050, DAR-CON-1112, DAR-CON-1120 | 100% |  | 2026-08-17 | 2026-10-03 |  |  |  |  | CON | DAR | MEP | P1 | NONE |
| DAR-CON-1132 |  | MEP second fix - Zone B |  | 37d | 2026-10-08 A | 2026-11-19 | DAR-CON-1131 | 49% | 19d | 2026-10-04 | 2026-11-18 | -7d | -15d |  |  | CON | DAR | MEP | P1 | NONE |
| DAR-CON-1140 |  | BMS & ELV installation |  | 35d | 2026-10-08 A | 2026-11-17 | DAR-CON-1120, DAR-CON-1131 | 51% | 17d | 2026-10-04 | 2026-11-12 | 68d | 54d |  |  | CON | DAR | MEP | P1 | NONE |
| DAR-CON-1135 |  | MEP second fix - Zone C (BOH & plant rooms) |  | 35d | 2026-10-26 A | 2026-12-05 | DAR-CON-1132 SS+15d | 9% | 32d | 2026-10-21 | 2026-11-30 | 53d | 39d |  |  | CON | DAR | MEP | P1 | NONE |
| DAR-CON-1150 |  | Vertical transportation installation |  | 35d | 2026-11-21 | 2026-12-30 | DAR-CON-1132 |  |  | 2026-11-19 | 2026-12-29 | 13d |  |  |  | CON | DAR | MEP | P1 | NONE |
| DAR-CON-1250 |  | Fire strategy changes - additional smoke extract works |  | 8d | 2026-11-21 | 2026-11-29 | DAR-CON-1132 |  |  |  |  | -4d |  |  |  | CON | DAR | MEP | P1 | NONE |
|  | MGT | **Management & Supervision** |  |  | 2026-01-17 | 2027-04-20 |  |  |  |  |  |  |  |  |  |  |  |  |  |  |
| DAR-CON-9010 |  | Construction supervision & site management (LOE) | level of effort | 382d | 2026-01-17 A | 2027-04-20 | DAR-CON-1010 SS, DAR-CON-M142 FF | 62% | 145d | 2026-01-17 | 2027-03-30 | -4d |  |  |  | CON | DAR | PMO | P1 | NONE |
|  | STR | **Structure & Envelope** |  |  | 2026-01-17 | 2026-06-22 |  |  |  |  |  |  |  |  |  |  |  |  |  |  |
| DAR-CON-1010 |  | Substructure & foundations |  | 40d | 2026-01-17 A | 2026-03-03 A | PRG-D1R-M000 | 100% |  |  |  |  |  | start on or after 2026-01-17 |  | CON | DAR | MWC | P1 | NONE |
| DAR-CON-1020 |  | Superstructure frame |  | 44d | 2026-03-04 A | 2026-04-27 A | DAR-CON-1010 | 100% |  |  |  |  |  |  |  | CON | DAR | MWC | P1 | NONE |
| DAR-CON-1030 |  | Roof structure & roofing |  | 44d | 2026-04-28 A | 2026-06-22 A | DAR-CON-1020 | 100% |  |  |  |  |  |  |  | CON | DAR | MWC | P1 | NONE |
| DAR-CON-1040 |  | Building envelope & facade |  | 44d | 2026-04-28 A | 2026-06-22 A | DAR-CON-1020 | 100% |  |  |  |  |  |  |  | CON | DAR | MWC | P1 | NONE |
|  | SYS | **Specialist Systems** |  |  | 2026-08-17 | 2027-02-23 |  |  |  |  |  |  |  |  |  |  |  |  |  |  |
| DAR-CON-1310 |  | Seating bowl & retractable seating |  | 44d | 2026-08-17 A | 2026-10-07 A | DAR-CON-1112 | 100% |  |  |  |  |  |  |  | CON | DAR | MEP | P1 | NONE |
| DAR-CON-1320 |  | Show systems (AV, rigging, LED) installation |  | 44d | 2026-10-08 A | 2026-11-28 | DAR-CON-1310 | 41% | 26d |  |  | 10d | 0d |  |  | CON | DAR | MEP | P1 | NONE |
| DAR-CON-1330 |  | Premium suites & hospitality fit-out |  | 44d | 2026-11-29 | 2027-01-18 | DAR-CON-1320 |  |  |  |  | 10d | 0d |  |  | CON | DAR | MWC | P1 | NONE |
| DAR-CON-1340 |  | Venue technology integration (ticketing, broadcast, IPTV) |  | 30d | 2027-01-19 | 2027-02-23 | DAR-CON-1330 |  |  |  |  | 10d | 0d |  |  | CON | DAR | MEP | P1 | NONE |
|  | TNC | **Testing & Commissioning** |  |  | 2027-01-20 | 2027-05-05 |  |  |  |  |  |  |  |  |  |  |  |  |  |  |
|  | COM | **Systems Commissioning** |  |  | 2027-01-25 | 2027-04-04 |  |  |  |  |  |  |  |  |  |  |  |  |  |  |
| DAR-TNC-2120 |  | Electrical systems commissioning |  | 20d | 2027-01-25 | 2027-02-13 | DAR-TNC-2010 SS+5d |  |  |  |  | 22d | 0d |  | DOP 7-Day T&C / Trials | TNC | DAR | MEP | P2 | NONE |
| DAR-TNC-2110 |  | HVAC & chilled water commissioning |  | 20d | 2027-02-09 | 2027-02-28 | DAR-TNC-2010, PEW-TNC-M041 |  |  | 2027-01-25 | 2027-02-18 | 16d | 0d |  | DOP 7-Day T&C / Trials | TNC | DAR | MEP | P2 | RECEIVER |
| DAR-TNC-2130 |  | Fire & life safety systems commissioning |  | 26d | 2027-02-14 | 2027-03-11 | DAR-CON-1250, DAR-TNC-2120 |  |  | 2027-02-14 | 2027-03-10 | 36d |  |  | DOP 7-Day T&C / Trials | TNC | DAR | MEP | P2 | NONE |
| DAR-TNC-2160 |  | Vertical transportation testing & certification |  | 10d | 2027-02-14 | 2027-02-23 | DAR-CON-1150, DAR-TNC-2120 |  |  |  |  | 52d |  |  | DOP 7-Day T&C / Trials | TNC | DAR | MEP | P2 | NONE |
| DAR-TNC-2140 |  | Show systems commissioning (AV, rigging, LED) |  | 25d | 2027-02-24 | 2027-03-20 | DAR-CON-1340, DAR-TNC-2120 |  |  |  |  | 12d | 0d |  | DOP 7-Day T&C / Trials | TNC | DAR | MEP | P2 | NONE |
| DAR-TNC-2150 |  | BMS & ELV commissioning |  | 16d | 2027-03-01 | 2027-03-16 | DAR-TNC-2110 |  |  | 2027-02-19 | 2027-03-10 | 16d | 0d |  | DOP 7-Day T&C / Trials | TNC | DAR | MEP | P2 | NONE |
| DAR-TNC-2170 |  | Security systems (CCTV, access control) commissioning |  | 15d | 2027-03-17 | 2027-03-31 | DAR-TNC-2150 |  |  | 2027-03-11 | 2027-03-25 | 16d |  |  | DOP 7-Day T&C / Trials | TNC | DAR | SSY | P2 | NONE |
| DAR-TNC-2145 |  | Acoustic & broadcast performance testing |  | 15d | 2027-03-21 | 2027-04-04 | DAR-TNC-2140 |  |  |  |  | 12d |  |  | DOP 7-Day T&C / Trials | TNC | DAR | ICA | P2 | NONE |

| ID | WBS | Activity | Type | Duration | Start | Finish | Predecessors | Planned start | Planned finish | Total float | Free float | Constraint | Calendar | Workstream | Asset | Owner | Phase | Interface | Readiness Gate |
| --- | --- | --- | --- | --- | --- | --- | --- | --- | --- | --- | --- | --- | --- | --- | --- | --- | --- | --- | --- |
|  | IST | **Integrated Systems Testing** |  |  | 2027-04-21 | 2027-05-05 |  |  |  |  |  |  |  |  |  |  |  |  |  |
| DAR-TNC-2210 |  | Integrated systems test (IST) |  | 15d | 2027-04-21 | 2027-05-05 | DAR-CON-9010, DAR-CON-M142, DAR-TNC-2130, DAR-TNC-2145, DAR-TNC-2150, DAR-TNC-2160, DAR-TNC-2170 | 2027-04-05 | 2027-04-19 | -4d |  |  | DOP 7-Day T&C / Trials | TNC | DAR | ICA | P2 | RECEIVER |  |
| DAR-TNC-M220 |  | T&C complete (ICA certificate) | milestone | 0d | 2027-05-05 | 2027-05-05 | DAR-TNC-2210 | 2027-04-19 | 2027-04-19 | -4d |  |  | DOP 7-Day T&C / Trials | TNC | DAR | ICA | P2 | GIVER | RG2 |
|  | PRE | **Pre-commissioning** |  |  | 2027-01-20 | 2027-02-08 |  |  |  |  |  |  |  |  |  |  |  |  |  |
| DAR-TNC-2010 |  | Pre-commissioning checks (electrical & mechanical) |  | 20d | 2027-01-20 | 2027-02-08 | DAR-CON-1132, DAR-CON-1135, DAR-CON-1140, DAR-CON-1210, DAR-CON-1220, PEW-TNC-M031 | 2027-01-05 | 2027-01-24 | 16d | 0d |  | DOP 7-Day T&C / Trials | TNC | DAR | MEP | P2 | RECEIVER |  |
|  | HOV | **Handover** |  |  | 2027-04-21 | 2027-06-30 |  |  |  |  |  |  |  |  |  |  |  |  |  |
|  | APR | **Authority Inspections & Approvals** |  |  | 2027-05-06 | 2027-06-30 |  |  |  |  |  |  |  |  |  |  |  |  |  |
| DAR-HOV-3110 |  | Civil defence & fire authority inspection |  | 15d | 2027-05-06 | 2027-06-02 | DAR-TNC-M220 | 2027-04-20 | 2027-05-10 | -4d |  |  | DOP 5-Day Office (Sun-Thu) | HOV | DAR | AAT | P3 | RECEIVER |  |
| DAR-HOV-3120 |  | Completion certificate application & review |  | 20d | 2027-06-03 | 2027-06-30 | DAR-HOV-3010, DAR-HOV-3110 | 2027-05-11 | 2027-06-14 | -4d |  |  | DOP 5-Day Office (Sun-Thu) | HOV | DAR | AAT | P3 | NONE |  |
| DAR-HOV-M130 |  | Occupancy certificate issued | milestone | 0d | 2027-06-30 | 2027-06-30 | DAR-HOV-3120 | 2027-06-14 | 2027-06-14 | -4d |  |  | DOP 5-Day Office (Sun-Thu) | HOV | DAR | AAT | P3 | GIVER |  |
|  | HND | **Completion & Handover** |  |  | 2027-05-06 | 2027-06-30 |  |  |  |  |  |  |  |  |  |  |  |  |  |
| DAR-HOV-3210 |  | Handover documentation (O&M, as-builts, warranties) |  | 25d | 2027-05-06 | 2027-06-16 | DAR-TNC-M220 | 2027-04-20 | 2027-05-31 | 46d | 10d |  | DOP 5-Day Office (Sun-Thu) | HOV | DAR | MWC | P3 | NONE |  |
| DAR-HOV-3220 |  | Defects walkdown with operator |  | 5d | 2027-06-01 | 2027-06-06 | DAR-HOV-3010 | 2027-05-05 | 2027-05-10 | 64d | 21d |  |  | HOV | DAR | OPR | P3 | NONE |  |
| DAR-HOV-M230 |  | Handover to operator | milestone | 0d | 2027-06-30 | 2027-06-30 | DAR-HOV-3210, DAR-HOV-3220, DAR-HOV-M130 | 2027-06-14 | 2027-06-14 | 43d |  |  |  | HOV | DAR | PMO | P3 | GIVER | RG3 |
|  | SNG | **Snagging & Defects** |  |  | 2027-04-21 | 2027-05-31 |  |  |  |  |  |  |  |  |  |  |  |  |  |
| DAR-HOV-3010 |  | Snagging & defects rectification |  | 30d | 2027-04-21 | 2027-05-31 | DAR-CON-M142 | 2027-03-31 | 2027-05-04 | -2d |  |  |  | HOV | DAR | MWC | P3 | NONE |  |
|  | OPM | **Operator Mobilisation & Training** |  |  | 2026-11-01 | 2027-08-26 |  |  |  |  |  |  |  |  |  |  |  |  |  |
|  | RCT | **Recruitment & Onboarding** |  |  | 2026-11-01 | 2027-05-05 |  |  |  |  |  |  |  |  |  |  |  |  |  |
| DAR-OPM-4010 |  | Recruitment wave 1 (leadership & technical) |  | 40d | 2026-11-01 | 2026-12-24 | PRG-OPM-4010 SS+20d |  |  | 31d | 0d | start on or after 2026-11-01 | DOP 5-Day Office (Sun-Thu) | OPM | DAR | OPR | P4 | NONE |  |
| DAR-OPM-4015 |  | Recruitment wave 2 (front-line staff) |  | 40d | 2026-12-27 | 2027-02-18 | DAR-OPM-4010 |  |  | 31d | 0d |  | DOP 5-Day Office (Sun-Thu) | OPM | DAR | OPR | P4 | NONE |  |
| DAR-OPM-4020 |  | Onboarding & induction |  | 20d | 2027-02-21 | 2027-03-24 | DAR-OPM-4015 |  |  | 31d | 0d |  | DOP 5-Day Office (Sun-Thu) | OPM | DAR | OPR | P4 | NONE |  |
| DAR-OPM-4030 |  | Uniforms, IT & systems provisioning |  | 30d | 2027-03-25 | 2027-05-05 | DAR-OPM-4020 |  |  | 31d |  |  | DOP 5-Day Office (Sun-Thu) | OPM | DAR | FMS | P4 | NONE |  |
|  | TRN | **Training & Familiarisation** |  |  | 2027-03-25 | 2027-08-26 |  |  |  |  |  |  |  |  |  |  |  |  |  |
| DAR-OPM-4110 |  | Classroom & simulator training |  | 30d | 2027-03-25 | 2027-05-05 | DAR-OPM-4020 |  |  | 31d |  |  | DOP 5-Day Office (Sun-Thu) | OPM | DAR | OPR | P4 | NONE |  |
| DAR-OPM-M120 |  | Operator site access granted | milestone | 0d | 2027-06-19 | 2027-06-19 | DAR-TNC-M220 | 2027-04-20 | 2027-04-20 | 6d |  | start on or after 2027-06-19 |  | OPM | DAR | SSY | P4 | RECEIVER |  |
| DAR-OPM-4130 |  | On-site familiarisation & equipment training |  | 30d | 2027-07-01 | 2027-07-30 | DAR-HOV-M130, DAR-OPM-4030, DAR-OPM-4110, DAR-OPM-M120 | 2027-06-15 | 2027-07-14 | -6d |  |  | DOP 7-Day T&C / Trials | OPM | DAR | OPR | P4 | RECEIVER |  |
| DAR-OPM-4140 |  | SOPs & emergency procedures validated |  | 20d | 2027-08-01 | 2027-08-26 | DAR-OPM-4130 | 2027-07-15 | 2027-08-11 | -5d |  |  | DOP 5-Day Office (Sun-Thu) | OPM | DAR | SSY | P4 | NONE |  |
| DAR-OPM-M150 |  | Operator trained & certified | milestone | 0d | 2027-08-26 | 2027-08-26 | DAR-OPM-4140 | 2027-08-11 | 2027-08-11 | -5d |  |  | DOP 5-Day Office (Sun-Thu) | OPM | DAR | OPR | P4 | NONE | RG3 |

| ID | WBS | Activity | Type | Duration | Start | Finish | Predecessors | Complete | Remaining | Planned start | Planned finish | Total float | Free float | Constraint | Calendar | Workstream | Asset | Owner | Phase | Interface | Readiness Gate |
| --- | --- | --- | --- | --- | --- | --- | --- | --- | --- | --- | --- | --- | --- | --- | --- | --- | --- | --- | --- | --- | --- |
|  | OTE | **Operational Trials & Test Events** |  |  | 2027-08-27 | 2027-10-05 |  |  |  |  |  |  |  |  |  |  |  |  |  |  |  |
|  | TEV | **Test Events** |  |  | 2027-09-21 | 2027-10-05 |  |  |  |  |  |  |  |  |  |  |  |  |  |  |  |
| DAR-OTE-5110 |  | Test events (invited guests) |  | 14d | 2027-09-21 | 2027-10-05 | DAR-HOV-M130, DAR-OTE-5020, DAR-OTE-5030 |  |  | 2027-09-06 | 2027-09-19 | -7d |  |  | DOP 7-Day T&C / Trials | OTE | DAR | OPR | P4 | NONE |  |
|  | TRL | **Operational Trials** |  |  | 2027-08-27 | 2027-09-20 |  |  |  |  |  |  |  |  |  |  |  |  |  |  |  |
| DAR-OTE-5010 |  | Operational trials (technical rehearsals) |  | 20d | 2027-08-27 | 2027-09-15 | DAR-HOV-M230, DAR-OPM-M150 |  |  | 2027-08-12 | 2027-08-31 | -7d |  |  | DOP 7-Day T&C / Trials | OTE | DAR | OPR | P4 | RECEIVER |  |
| DAR-OTE-5030 |  | Ticketing & POS systems trial |  | 7d | 2027-08-30 | 2027-09-05 | DAR-OPM-4030, DAR-OTE-5010 SS+3d, PRG-OTE-5010 |  |  | 2027-08-15 | 2027-08-21 | 8d |  |  | DOP 7-Day T&C / Trials | OTE | DAR | OPR | P4 | NONE |  |
| DAR-OTE-5020 |  | Emergency drills with civil defence |  | 5d | 2027-09-16 | 2027-09-20 | DAR-OTE-5010 |  |  | 2027-09-01 | 2027-09-05 | -7d |  |  | DOP 7-Day T&C / Trials | OTE | DAR | SSY | P4 | NONE |  |
|  | D1R | **Day 1 Readiness** |  |  | 2027-10-06 | 2027-10-14 |  |  |  |  |  |  |  |  |  |  |  |  |  |  |  |
|  | GAT | **Readiness Gates** |  |  | 2027-10-06 | 2027-10-14 |  |  |  |  |  |  |  |  |  |  |  |  |  |  |  |
| DAR-D1R-6010 |  | Operational readiness assessment |  | 7d | 2027-10-06 | 2027-10-14 | DAR-OTE-5110 |  |  | 2027-09-20 | 2027-09-29 | -5d |  |  | DOP 5-Day Office (Sun-Thu) | D1R | DAR | PMO | P5 | NONE |  |
| DAR-D1R-M020 |  | Asset Day 1 ready | milestone | 0d | 2027-10-14 | 2027-10-14 | DAR-D1R-6010 |  |  | 2027-09-29 | 2027-09-29 | -5d |  |  | DOP 7-Day T&C / Trials | D1R | DAR | PMO | P5 | GIVER | RG4 |
|  | PBR | **Palm Boulevard (Retail & Dining)** |  |  | 2026-01-10 | 2027-09-08 |  |  |  |  |  |  |  |  |  |  |  |  |  |  |  |
|  | CON | **Construction** |  |  | 2026-01-10 | 2027-03-14 |  |  |  |  |  |  |  |  |  |  |  |  |  |  |  |
|  | EXT | **External Works** |  |  | 2026-12-30 | 2027-03-14 |  |  |  |  |  |  |  |  |  |  |  |  |  |  |  |
| PBR-CON-1410 |  | External works & landscaping |  | 40d | 2026-12-30 | 2027-02-14 | PBR-CON-1040, PBR-CON-1220 |  |  |  |  | 24d | 0d |  |  | CON | PBR | MWC | P1 | NONE |  |
| PBR-CON-1430 |  | Car parks & drop-off |  | 30d | 2027-01-11 | 2027-02-14 | PBR-CON-1010, PBR-CON-1410 FF |  |  |  |  | 24d | 20d |  |  | CON | PBR | MWC | P1 | NONE |  |
| PBR-CON-M142 |  | Ready for commissioning (construction complete) | milestone | 0d | 2027-03-14 | 2027-03-14 | PBR-CON-1135, PBR-CON-1140, PBR-CON-1150, PBR-CON-1210, PBR-CON-1230, PBR-CON-1340, PBR-CON-1430 |  |  |  |  | 4d | 0d |  |  | CON | PBR | MWC | P1 | GIVER | RG1 |
|  | FIT | **Fit-out & Finishes** |  |  | 2026-06-11 | 2027-03-14 |  |  |  |  |  |  |  |  |  |  |  |  |  |  |  |
| PBR-CON-1050 |  | Internal partitions & ceilings |  | 35d | 2026-06-11 A | 2026-07-21 A | PBR-CON-1030, PBR-CON-1040 | 100% |  |  |  |  |  |  |  | CON | PBR | MWC | P1 | NONE |  |
| PBR-CON-1210 |  | Back-of-house fit-out |  | 40d | 2026-11-09 | 2026-12-24 | PBR-CON-1132 |  |  |  |  | 4d |  |  |  | CON | PBR | MWC | P1 | NONE |  |
| PBR-CON-1220 |  | Front-of-house fit-out & finishes |  | 44d | 2026-11-09 | 2026-12-29 | PBR-CON-1132 |  |  |  |  | 0d |  |  |  | CON | PBR | MWC | P1 | NONE |  |
| PBR-CON-1225 |  | FOH final finishes & joinery |  | 40d | 2026-12-30 | 2027-02-14 | PBR-CON-1150, PBR-CON-1220 |  |  |  |  | 4d | 0d |  |  | CON | PBR | MWC | P1 | NONE |  |
| PBR-CON-1230 |  | Signage & wayfinding |  | 20d | 2027-02-15 | 2027-03-14 | PBR-CON-1225 |  |  |  |  | 4d | 0d |  |  | CON | PBR | MWC | P1 | NONE |  |
|  | MEP | **MEP Installation** |  |  | 2026-04-16 | 2026-12-19 |  |  |  |  |  |  |  |  |  |  |  |  |  |  |  |
| PBR-CON-1110 |  | MEP first fix - lower levels |  | 40d | 2026-04-16 A | 2026-06-06 A | PBR-CON-1020 | 100% |  |  |  |  |  |  |  | CON | PBR | MEP | P1 | NONE |  |
| PBR-CON-1105 |  | Long-lead MEP plant procurement & delivery |  | 44d | 2026-05-02 A | 2026-06-25 A | PRG-D1R-M000 | 100% |  |  |  |  |  | start on or after 2026-05-02 |  | CON | PBR | MEP | P1 | NONE |  |
| PBR-CON-1112 |  | MEP first fix - upper levels & roof plant |  | 40d | 2026-06-07 A | 2026-07-22 A | PBR-CON-1110 | 100% |  |  |  |  |  |  |  | CON | PBR | MEP | P1 | NONE |  |
| PBR-CON-1120 |  | Main plant installation (chillers, switchgear, AHUs) |  | 35d | 2026-06-27 A | 2026-08-05 A | PBR-CON-1030, PBR-CON-1105 | 100% |  |  |  |  |  |  |  | CON | PBR | MEP | P1 | NONE |  |
| PBR-CON-1131 |  | MEP second fix - Zone A |  | 40d | 2026-08-06 A | 2026-09-21 A | PBR-CON-1050, PBR-CON-1112, PBR-CON-1120 | 100% |  |  |  |  |  |  |  | CON | PBR | MEP | P1 | NONE |  |
| PBR-CON-1132 |  | MEP second fix - Zone B |  | 40d | 2026-09-22 A | 2026-11-08 | PBR-CON-1131 | 78% | 9d |  |  | 0d | -15d |  |  | CON | PBR | MEP | P1 | NONE |  |
| PBR-CON-1140 |  | BMS & ELV installation |  | 35d | 2026-09-22 A | 2026-11-02 | PBR-CON-1120, PBR-CON-1131 | 89% | 4d |  |  | 49d |  |  |  | CON | PBR | MEP | P1 | NONE |  |
| PBR-CON-1135 |  | MEP second fix - Zone C (BOH & plant rooms) |  | 35d | 2026-10-11 A | 2026-11-19 | PBR-CON-1132 SS+15d | 46% | 19d |  |  | 34d |  |  |  | CON | PBR | MEP | P1 | NONE |  |
| PBR-CON-1150 |  | Vertical transportation installation |  | 35d | 2026-11-09 | 2026-12-19 | PBR-CON-1132 |  |  |  |  | 13d | 9d |  |  | CON | PBR | MEP | P1 | NONE |  |

| ID | WBS | Activity | Type | Duration | Start | Finish | Predecessors | Complete | Remaining | Planned start | Planned finish | Total float | Free float | Constraint | Calendar | Workstream | Asset | Owner | Phase | Interface | Readiness Gate |
| --- | --- | --- | --- | --- | --- | --- | --- | --- | --- | --- | --- | --- | --- | --- | --- | --- | --- | --- | --- | --- | --- |
|  | MGT | **Management & Supervision** |  |  | 2026-01-10 | 2027-03-14 |  |  |  |  |  |  |  |  |  |  |  |  |  |  |  |
| PBR-CON-9010 |  | Construction supervision & site management (LOE) | level of effort | 356d | 2026-01-10 A | 2027-03-14 | PBR-CON-1010 SS, PBR-CON-M142 FF | 68% | 113d |  |  | 4d |  |  |  | CON | PBR | PMO | P1 | NONE |  |
|  | STR | **Structure & Envelope** |  |  | 2026-01-10 | 2026-06-10 |  |  |  |  |  |  |  |  |  |  |  |  |  |  |  |
| PBR-CON-1010 |  | Substructure & foundations |  | 40d | 2026-01-10 A | 2026-02-24 A | PRG-D1R-M000 | 100% |  |  |  |  |  | start on or after 2026-01-10 |  | CON | PBR | MWC | P1 | NONE |  |
| PBR-CON-1020 |  | Superstructure frame |  | 40d | 2026-02-25 A | 2026-04-15 A | PBR-CON-1010 | 100% |  |  |  |  |  |  |  | CON | PBR | MWC | P1 | NONE |  |
| PBR-CON-1030 |  | Roof structure & roofing |  | 40d | 2026-04-16 A | 2026-06-06 A | PBR-CON-1020 | 100% |  |  |  |  |  |  |  | CON | PBR | MWC | P1 | NONE |  |
| PBR-CON-1040 |  | Building envelope & facade |  | 44d | 2026-04-16 A | 2026-06-10 A | PBR-CON-1020 | 100% |  |  |  |  |  |  |  | CON | PBR | MWC | P1 | NONE |  |
|  | SYS | **Specialist Systems** |  |  | 2026-07-23 | 2027-02-10 |  |  |  |  |  |  |  |  |  |  |  |  |  |  |  |
| PBR-CON-1310 |  | Shell & core handover to tenants |  | 30d | 2026-07-23 A | 2026-08-26 A | PBR-CON-1112 | 100% |  |  |  |  |  |  |  | CON | PBR | MEP | P1 | NONE |  |
| PBR-CON-1320 |  | Tenant fit-out - wave 1 |  | 44d | 2026-09-27 A | 2026-11-16 | PBR-CON-1310 FS+25d | 64% | 16d |  |  | 1d | 0d |  |  | CON | PBR | MEP | P1 | NONE |  |
| PBR-CON-1330 |  | Tenant fit-out - wave 2 |  | 44d | 2026-11-17 | 2027-01-06 | PBR-CON-1320 |  |  |  |  | 1d | 0d |  |  | CON | PBR | MWC | P1 | NONE |  |
| PBR-CON-1340 |  | Tenant fit-out - wave 3 & public realm |  | 30d | 2027-01-07 | 2027-02-10 | PBR-CON-1330 |  |  |  |  | 1d |  |  |  | CON | PBR | MEP | P1 | NONE |  |
|  | TNC | **Testing & Commissioning** |  |  | 2027-01-12 | 2027-04-16 |  |  |  |  |  |  |  |  |  |  |  |  |  |  |  |
|  | COM | **Systems Commissioning** |  |  | 2027-02-01 | 2027-04-01 |  |  |  |  |  |  |  |  |  |  |  |  |  |  |  |
| PBR-TNC-2110 |  | HVAC & chilled water commissioning |  | 25d | 2027-02-01 | 2027-02-25 | PBR-TNC-2010, PEW-TNC-M041 |  |  | 2027-01-19 | 2027-02-12 | -13d |  |  | DOP 7-Day T&C / Trials | TNC | PBR | MEP | P2 | RECEIVER |  |
| PBR-TNC-2120 |  | Electrical systems commissioning |  | 20d | 2027-02-01 | 2027-02-20 | PBR-TNC-2010 |  |  | 2027-01-19 | 2027-02-07 | -8d |  |  | DOP 7-Day T&C / Trials | TNC | PBR | MEP | P2 | NONE |  |
| PBR-TNC-2130 |  | Fire & life safety systems commissioning |  | 25d | 2027-02-21 | 2027-03-17 | PBR-TNC-2120 |  |  | 2027-02-08 | 2027-03-04 | 2d |  |  | DOP 7-Day T&C / Trials | TNC | PBR | MEP | P2 | NONE |  |
| PBR-TNC-2140 |  | Tenant systems integration testing |  | 20d | 2027-02-21 | 2027-03-12 | PBR-CON-1340, PBR-TNC-2120 |  |  | 2027-02-11 | 2027-03-02 | -8d |  |  | DOP 7-Day T&C / Trials | TNC | PBR | MEP | P2 | NONE |  |
| PBR-TNC-2160 |  | Vertical transportation testing & certification |  | 10d | 2027-02-21 | 2027-03-02 | PBR-CON-1150, PBR-TNC-2120 |  |  | 2027-02-08 | 2027-02-17 | 17d |  |  | DOP 7-Day T&C / Trials | TNC | PBR | MEP | P2 | NONE |  |
| PBR-TNC-2150 |  | BMS & ELV commissioning |  | 20d | 2027-02-26 | 2027-03-17 | PBR-TNC-2110 |  |  | 2027-02-13 | 2027-03-04 | -13d |  |  | DOP 7-Day T&C / Trials | TNC | PBR | MEP | P2 | NONE |  |
| PBR-TNC-2145 |  | Kitchen extract & fire suppression testing |  | 15d | 2027-03-13 | 2027-03-27 | PBR-TNC-2140 |  |  | 2027-03-03 | 2027-03-17 | -8d |  |  | DOP 7-Day T&C / Trials | TNC | PBR | ICA | P2 | NONE |  |
| PBR-TNC-2170 |  | Security systems (CCTV, access control) commissioning |  | 15d | 2027-03-18 | 2027-04-01 | PBR-TNC-2150 |  |  | 2027-03-05 | 2027-03-19 | -13d |  |  | DOP 7-Day T&C / Trials | TNC | PBR | SSY | P2 | NONE |  |
|  | IST | **Integrated Systems Testing** |  |  | 2027-04-02 | 2027-04-16 |  |  |  |  |  |  |  |  |  |  |  |  |  |  |  |
| PBR-TNC-2210 |  | Integrated systems test (IST) |  | 15d | 2027-04-02 | 2027-04-16 | PBR-CON-M142, PBR-TNC-2130, PBR-TNC-2145, PBR-TNC-2150, PBR-TNC-2160, PBR-TNC-2170 |  |  | 2027-03-20 | 2027-04-03 | -13d |  |  | DOP 7-Day T&C / Trials | TNC | PBR | ICA | P2 | RECEIVER |  |
| PBR-TNC-M220 |  | T&C complete (ICA certificate) | milestone | 0d | 2027-04-16 | 2027-04-16 | PBR-TNC-2210 |  |  | 2027-04-03 | 2027-04-03 | -13d |  |  | DOP 7-Day T&C / Trials | TNC | PBR | ICA | P2 | GIVER | RG2 |

| ID | WBS | Activity | Type | Duration | Start | Finish | Predecessors | Planned start | Planned finish | Total float | Free float | Constraint | Calendar | Workstream | Asset | Owner | Phase | Interface | Readiness Gate |
| --- | --- | --- | --- | --- | --- | --- | --- | --- | --- | --- | --- | --- | --- | --- | --- | --- | --- | --- | --- |
|  | PRE | **Pre-commissioning** |  |  | 2027-01-12 | 2027-01-31 |  |  |  |  |  |  |  |  |  |  |  |  |  |
| PBR-TNC-2010 |  | Pre-commissioning checks (electrical & mechanical) |  | 20d | 2027-01-12 | 2027-01-31 | PBR-CON-1132, PBR-CON-1135, PBR-CON-1140, PBR-CON-1210, PBR-CON-1220, PEW-TNC-M031 | 2026-12-30 | 2027-01-18 | -13d |  |  | DOP 7-Day T&C / Trials | TNC | PBR | MEP | P2 | RECEIVER |  |
|  | HOV | **Handover** |  |  | 2027-03-15 | 2027-05-27 |  |  |  |  |  |  |  |  |  |  |  |  |  |
|  | APR | **Authority Inspections & Approvals** |  |  | 2027-04-04 | 2027-05-27 |  |  |  |  |  |  |  |  |  |  |  |  |  |
| PBR-HOV-3110 |  | Civil defence & fire authority inspection |  | 15d | 2027-04-04 | 2027-04-22 | PBR-TNC-M220 |  |  | 0d |  | mandatory finish 2027-04-22 | DOP 5-Day Office (Sun-Thu) | HOV | PBR | AAT | P3 | RECEIVER |  |
| PBR-HOV-3120 |  | Completion certificate application & review |  | 20d | 2027-04-25 | 2027-05-27 | PBR-HOV-3010, PBR-HOV-3110 |  |  | 20d | 0d |  | DOP 5-Day Office (Sun-Thu) | HOV | PBR | AAT | P3 | NONE |  |
| PBR-HOV-M130 |  | Occupancy certificate issued | milestone | 0d | 2027-05-27 | 2027-05-27 | PBR-HOV-3120 |  |  | 20d | 0d |  | DOP 5-Day Office (Sun-Thu) | HOV | PBR | AAT | P3 | GIVER |  |
|  | HND | **Completion & Handover** |  |  | 2027-04-18 | 2027-05-27 |  |  |  |  |  |  |  |  |  |  |  |  |  |
| PBR-HOV-3210 |  | Handover documentation (O&M, as-builts, warranties) |  | 25d | 2027-04-18 | 2027-05-27 | PBR-TNC-M220 | 2027-04-04 | 2027-05-06 | 60d | 0d |  | DOP 5-Day Office (Sun-Thu) | HOV | PBR | MWC | P3 | NONE |  |
| PBR-HOV-3220 |  | Defects walkdown with operator |  | 5d | 2027-04-19 | 2027-04-24 | PBR-HOV-3010 |  |  | 96d | 24d |  |  | HOV | PBR | OPR | P3 | NONE |  |
| PBR-HOV-M230 |  | Handover to operator | milestone | 0d | 2027-05-27 | 2027-05-27 | PBR-HOV-3210, PBR-HOV-3220, PBR-HOV-M130 |  |  | 72d | 48d |  |  | HOV | PBR | PMO | P3 | GIVER | RG3 |
|  | SNG | **Snagging & Defects** |  |  | 2027-03-15 | 2027-04-18 |  |  |  |  |  |  |  |  |  |  |  |  |  |
| PBR-HOV-3010 |  | Snagging & defects rectification |  | 30d | 2027-03-15 | 2027-04-18 | PBR-CON-M142 |  |  | 30d | 0d |  |  | HOV | PBR | MWC | P3 | NONE |  |
|  | OPM | **Operator Mobilisation & Training** |  |  | 2026-11-01 | 2027-07-22 |  |  |  |  |  |  |  |  |  |  |  |  |  |
|  | RCT | **Recruitment & Onboarding** |  |  | 2026-11-01 | 2027-05-05 |  |  |  |  |  |  |  |  |  |  |  |  |  |
| PBR-OPM-4010 |  | Recruitment wave 1 (leadership & technical) |  | 40d | 2026-11-01 | 2026-12-24 | PRG-OPM-4010 SS+20d |  |  | 31d | 0d | start on or after 2026-11-01 | DOP 5-Day Office (Sun-Thu) | OPM | PBR | OPR | P4 | NONE |  |
| PBR-OPM-4015 |  | Recruitment wave 2 (front-line staff) |  | 40d | 2026-12-27 | 2027-02-18 | PBR-OPM-4010 |  |  | 31d | 0d |  | DOP 5-Day Office (Sun-Thu) | OPM | PBR | OPR | P4 | NONE |  |
| PBR-OPM-4020 |  | Onboarding & induction |  | 20d | 2027-02-21 | 2027-03-24 | PBR-OPM-4015 |  |  | 31d | 0d |  | DOP 5-Day Office (Sun-Thu) | OPM | PBR | OPR | P4 | NONE |  |
| PBR-OPM-4030 |  | Uniforms, IT & systems provisioning |  | 30d | 2027-03-25 | 2027-05-05 | PBR-OPM-4020 |  |  | 31d | 11d |  | DOP 5-Day Office (Sun-Thu) | OPM | PBR | FMS | P4 | NONE |  |
|  | TRN | **Training & Familiarisation** |  |  | 2027-03-25 | 2027-07-22 |  |  |  |  |  |  |  |  |  |  |  |  |  |
| PBR-OPM-4110 |  | Classroom & simulator training |  | 30d | 2027-03-25 | 2027-05-05 | PBR-OPM-4020 |  |  | 31d | 11d |  | DOP 5-Day Office (Sun-Thu) | OPM | PBR | OPR | P4 | NONE |  |
| PBR-OPM-M120 |  | Operator site access granted | milestone | 0d | 2027-04-17 | 2027-04-17 | PBR-TNC-M220 | 2027-04-04 | 2027-04-04 | 55d | 31d |  |  | OPM | PBR | SSY | P4 | RECEIVER |  |
| PBR-OPM-4130 |  | On-site familiarisation & equipment training |  | 30d | 2027-05-28 | 2027-06-26 | PBR-HOV-M130, PBR-OPM-4030, PBR-OPM-4110, PBR-OPM-M120 |  |  | 28d | 0d |  | DOP 7-Day T&C / Trials | OPM | PBR | OPR | P4 | RECEIVER |  |
| PBR-OPM-4140 |  | SOPs & emergency procedures validated |  | 20d | 2027-06-27 | 2027-07-22 | PBR-OPM-4130 |  |  | 20d | 0d |  | DOP 5-Day Office (Sun-Thu) | OPM | PBR | SSY | P4 | NONE |  |
| PBR-OPM-M150 |  | Operator trained & certified | milestone | 0d | 2027-07-22 | 2027-07-22 | PBR-OPM-4140 |  |  | 20d | 0d |  | DOP 5-Day Office (Sun-Thu) | OPM | PBR | OPR | P4 | NONE | RG3 |

| ID | WBS | Activity | Type | Duration | Start | Finish | Predecessors | Complete | Remaining | Total float | Free float | Constraint | Calendar | Workstream | Asset | Owner | Phase | Interface | Readiness Gate |
| --- | --- | --- | --- | --- | --- | --- | --- | --- | --- | --- | --- | --- | --- | --- | --- | --- | --- | --- | --- |
|  | OTE | **Operational Trials & Test Events** |  |  | 2027-07-23 | 2027-08-30 |  |  |  |  |  |  |  |  |  |  |  |  |  |
|  | TEV | **Test Events** |  |  | 2027-08-17 | 2027-08-30 |  |  |  |  |  |  |  |  |  |  |  |  |  |
| PBR-OTE-5110 |  | Test events (invited guests) |  | 14d | 2027-08-17 | 2027-08-30 | PBR-HOV-M130, PBR-OTE-5020, PBR-OTE-5030 |  |  | 28d | 0d |  | DOP 7-Day T&C / Trials | OTE | PBR | OPR | P4 | NONE |  |
|  | TRL | **Operational Trials** |  |  | 2027-07-23 | 2027-08-16 |  |  |  |  |  |  |  |  |  |  |  |  |  |
| PBR-OTE-5010 |  | Operational trials (technical rehearsals) |  | 20d | 2027-07-23 | 2027-08-11 | PBR-HOV-M230, PBR-OPM-M150 |  |  | 28d | 0d |  | DOP 7-Day T&C / Trials | OTE | PBR | OPR | P4 | RECEIVER |  |
| PBR-OTE-5030 |  | Ticketing & POS systems trial |  | 7d | 2027-07-26 | 2027-08-01 | PBR-OPM-4030, PBR-OTE-5010 SS+3d, PRG-OTE-5010 |  |  | 43d | 15d |  | DOP 7-Day T&C / Trials |  | PBR | OPR | P4 | NONE |  |
| PBR-OTE-5020 |  | Emergency drills with civil defence |  | 5d | 2027-08-12 | 2027-08-16 | PBR-OTE-5010 |  |  | 28d | 0d |  | DOP 7-Day T&C / Trials | OTE | PBR | SSY | P4 | NONE |  |
|  | D1R | **Day 1 Readiness** |  |  | 2027-08-31 | 2027-09-08 |  |  |  |  |  |  |  |  |  |  |  |  |  |
|  | GAT | **Readiness Gates** |  |  | 2027-08-31 | 2027-09-08 |  |  |  |  |  |  |  |  |  |  |  |  |  |
| PBR-D1R-6010 |  | Operational readiness assessment |  | 7d | 2027-08-31 | 2027-09-08 | PBR-OTE-5110 |  |  | 20d | 0d |  | DOP 5-Day Office (Sun-Thu) | D1R | PBR | PMO | P5 | NONE |  |
| PBR-D1R-M020 |  | Asset Day 1 ready | milestone | 0d | 2027-09-08 | 2027-09-08 | PBR-D1R-6010 |  |  | 30d |  |  | DOP 7-Day T&C / Trials | D1R | PBR | PMO | P5 | GIVER | RG4 |
|  | PEW | **Programme Enabling Works** |  |  | 2026-07-04 | 2027-08-22 |  |  |  |  |  |  |  |  |  |  |  |  |  |
|  | CON | **Construction** |  |  | 2026-07-04 | 2027-06-28 |  |  |  |  |  |  |  |  |  |  |  |  |  |
|  | CLG | **District Cooling** |  |  | 2026-09-05 | 2026-12-23 |  |  |  |  |  |  |  |  |  |  |  |  |  |
| PEW-CON-1050 |  | District cooling plant - civil & structure |  | 44d | 2026-09-05 A | 2026-10-26 A | PRG-D1R-M000 | 100% |  |  |  | start on or after 2026-09-05 |  | CON | PEW | MWC | P1 | NONE |  |
| PEW-CON-1060 |  | District cooling plant - chillers & pumps installation |  | 44d | 2026-10-27 A | 2026-12-16 | PEW-CON-1050 | 5% | 42d | 3d | -2d |  |  | CON | PEW | MEP | P1 | NONE |  |
| PEW-CON-1070 |  | Chilled water distribution network |  | 40d | 2026-11-08 | 2026-12-23 | PEW-CON-1060 SS+10d |  |  | 5d | 0d |  |  | CON | PEW | MWC | P1 | NONE |  |
|  | ICT | **Telecom & ICT** |  |  | 2026-11-18 | 2026-12-28 |  |  |  |  |  |  |  |  |  |  |  |  |  |
| PEW-CON-1170 |  | Telecom & ICT backbone |  | 35d | 2026-11-18 | 2026-12-28 | PEW-CON-1080 |  |  | 194d | 0d |  |  | CON | PEW | MEP | P1 | NONE |  |
|  | MGT | **Management & Supervision** |  |  | 2026-08-01 | 2027-06-28 |  |  |  |  |  |  |  |  |  |  |  |  |  |
| PEW-CON-9010 |  | Enabling works supervision (LOE) | level of effort | 275d | 2026-08-01 A | 2027-06-28 | PEW-CON-1010 SS, PEW-CON-1150 FF | 28% | 199d | 28d |  |  |  | CON | PEW | PMO | P1 | NONE |  |
|  | PWR | **Power** |  |  | 2026-08-01 | 2026-11-07 |  |  |  |  |  |  |  |  |  |  |  |  |  |
| PEW-CON-1010 |  | Main substation civil works |  | 40d | 2026-08-01 A | 2026-09-15 A | PRG-D1R-M000 | 100% |  |  |  | start on or after 2026-08-01 |  | CON | PEW | MWC | P1 | NONE |  |
| PEW-CON-1020 |  | Main substation building & equipment installation |  | 44d | 2026-09-16 A | 2026-11-07 | PEW-CON-1010 | 82% | 8d | 26d | 0d |  |  | CON | PEW | MEP | P1 | NONE |  |
| PEW-CON-1030 |  | HV cabling |  | 40d | 2026-09-16 A | 2026-11-02 | PEW-CON-1010 | 90% | 4d | 39d | 13d |  |  | CON | PEW | MEP | P1 | NONE |  |
| PEW-CON-1040 |  | HV cabling |  | 44d | 2026-09-16 A | 2026-11-07 | PEW-CON-1010 | 82% | 8d | 36d |  |  |  | CON | PEW | MEP | P1 | NONE |  |

| ID | WBS | Activity | Type | Duration | Start | Finish | Predecessors | Complete | Remaining | Planned start | Planned finish | Total float | Free float | Constraint | Calendar | Workstream | Asset | Owner | Phase | Interface |
| --- | --- | --- | --- | --- | --- | --- | --- | --- | --- | --- | --- | --- | --- | --- | --- | --- | --- | --- | --- | --- |
|  | RDS | **Roads** |  |  | 2026-07-04 | 2026-12-03 |  |  |  |  |  |  |  |  |  |  |  |  |  |  |
| PEW-CON-1110 |  | Primary access road & junctions |  | 44d | 2026-07-04 A | 2026-10-18 A | PRG-D1R-M000 | 100% |  | 2026-07-04 | 2026-08-23 |  |  | start on or after 2026-07-04 |  | CON | PEW | MWC | P1 | NONE |
| PEW-CON-1120 |  | Internal roads, lighting & signage |  | 35d | 2026-10-19 A | 2026-11-28 | PEW-CON-1110 | 26% | 26d | 2026-08-24 | 2026-10-04 | 205d | 0d |  |  | CON | PEW | MWC | P1 | NONE |
| PEW-CON-1160 |  | Transport hub & car park structure |  | 40d | 2026-10-19 A | 2026-12-03 | PEW-CON-1110 | 22% | 31d | 2026-08-24 | 2026-10-10 | 243d | 214d |  |  | CON | PEW | MWC | P1 | NONE |
|  | TRS | **Transit** |  |  | 2027-01-02 | 2027-06-28 |  |  |  |  |  |  |  |  |  |  |  |  |  |  |
| PEW-CON-1130 |  | Transit link guideway & stations |  | 100d | 2027-01-02 | 2027-05-02 | PRG-D1R-M000 |  |  |  |  | 28d | 0d | start on or after 2027-01-02 |  | CON | PEW | MWC | P1 | NONE |
| PEW-CON-1150 |  | Transit systems installation (track, power, signalling) |  | 44d | 2027-05-03 | 2027-06-28 | PEW-CON-1130 |  |  |  |  | 28d | 0d |  |  | CON | PEW | MEP | P1 | NONE |
|  | WAT | **Water & Drainage** |  |  | 2026-10-03 | 2026-12-28 |  |  |  |  |  |  |  |  |  |  |  |  |  |  |
| PEW-CON-1080 |  | Potable & irrigation water network |  | 40d | 2026-10-03 A | 2026-11-17 | PRG-D1R-M000 | 57% | 17d |  |  | 179d | 0d | start on or after 2026-10-03 |  | CON | PEW | MWC | P1 | NONE |
| PEW-CON-1090 |  | Sewer & stormwater network |  | 35d | 2026-11-18 | 2026-12-28 | PEW-CON-1080 |  |  |  |  | 179d | 93d |  |  | CON | PEW | MWC | P1 | NONE |
|  | TNC | **Testing & Commissioning** |  |  | 2026-11-08 | 2027-07-23 |  |  |  |  |  |  |  |  |  |  |  |  |  |  |
|  | CLG | **District Cooling** |  |  | 2026-12-24 | 2027-01-12 |  |  |  |  |  |  |  |  |  |  |  |  |  |  |
| PEW-TNC-2040 |  | District cooling commissioning |  | 20d | 2026-12-24 | 2027-01-12 | PEW-CON-1060, PEW-CON-1070, PEW-TNC-2020 |  |  |  |  | 6d | 0d |  | DOP 7-Day T&C / Trials | TNC | PEW | MEP | P2 | NONE |
| PEW-TNC-M041 |  | District cooling available | milestone | 0d | 2027-01-12 | 2027-01-12 | PEW-TNC-2040 |  |  |  |  | 6d | 0d |  | DOP 7-Day T&C / Trials | TNC | PEW | MEP | P2 | GIVER |
|  | ICT | **Telecom & ICT** |  |  | 2026-12-29 | 2027-01-07 |  |  |  |  |  |  |  |  |  |  |  |  |  |  |
| PEW-TNC-2060 |  | Telecom backbone commissioning |  | 10d | 2026-12-29 | 2027-01-07 | PEW-CON-1170 |  |  |  |  | 237d | 5d |  | DOP 7-Day T&C / Trials | TNC | PEW | MEP | P2 | NONE |
|  | PWR | **Power** |  |  | 2026-11-08 | 2027-01-11 |  |  |  |  |  |  |  |  |  |  |  |  |  |  |
| PEW-TNC-2010 |  | Main substation energisation |  | 10d | 2026-11-08 | 2026-11-17 | PEW-CON-1020 |  |  |  |  | 30d | 0d |  | DOP 7-Day T&C / Trials | TNC | PEW | MEP | P2 | NONE |
| PEW-TNC-2020 |  | South loop HV commissioning & energisation |  | 10d | 2026-11-18 | 2026-11-27 | PEW-CON-1030, PEW-TNC-2010 |  |  |  |  | 30d | 0d |  | DOP 7-Day T&C / Trials | TNC | PEW | MEP | P2 | NONE |
| PEW-TNC-M021 |  | Permanent power available - South loop | milestone | 0d | 2026-11-27 | 2026-11-27 | PEW-TNC-2020 |  |  |  |  | 30d | 4d |  | DOP 7-Day T&C / Trials | TNC | PEW | MEP | P2 | GIVER |
| PEW-TNC-2030 |  | North loop HV commissioning & energisation |  | 10d | 2027-01-02 | 2027-01-11 | PEW-CON-1040, PEW-TNC-2010 |  |  | 2026-11-18 | 2026-11-27 | -13d |  | start on or after 2027-01-02 | DOP 7-Day T&C / Trials | TNC | PEW | MEP | P2 | NONE |
| PEW-TNC-M031 |  | Permanent power available - North loop | milestone | 0d | 2027-01-11 | 2027-01-11 | PEW-TNC-2030 |  |  | 2026-11-27 | 2026-11-27 | -13d |  |  | DOP 7-Day T&C / Trials | TNC | PEW | MEP | P2 | GIVER |
|  | TRS | **Transit** |  |  | 2027-06-24 | 2027-07-23 |  |  |  |  |  |  |  |  |  |  |  |  |  |  |
| PEW-TNC-2070 |  | Transit system dynamic testing |  | 30d | 2027-06-24 | 2027-07-23 | PEW-CON-1150 FS-5d, PEW-TNC-2030 |  |  |  |  | 33d | 0d |  | DOP 7-Day T&C / Trials | TNC | PEW | ICA | P2 | NONE |
| PEW-TNC-M071 |  | Transit ready for trial running | milestone | 0d | 2027-07-23 | 2027-07-23 | PEW-TNC-2070 |  |  |  |  | 33d | 0d |  | DOP 7-Day T&C / Trials | TNC | PEW | ICA | P2 | GIVER |

| ID | WBS | Activity | Type | Duration | Start | Finish | Predecessors | Complete | Planned start | Planned finish | Total float | Free float | Constraint | Calendar | Workstream | Asset | Owner | Phase | Interface | Readiness Gate |
| --- | --- | --- | --- | --- | --- | --- | --- | --- | --- | --- | --- | --- | --- | --- | --- | --- | --- | --- | --- | --- |
|  | WAT | **Water & Drainage** |  |  | 2026-11-18 | 2026-11-27 |  |  |  |  |  |  |  |  |  |  |  |  |  |  |
| PEW-TNC-2050 |  | Water network testing & disinfection |  | 10d | 2026-11-18 | 2026-11-27 | PEW-CON-1080 |  |  |  | 236d | 4d |  | DOP 7-Day T&C / Trials | TNC | PEW | MWC | P2 | NONE |  |
|  | HOV | **Handover** |  |  | 2026-11-29 | 2027-08-19 |  |  |  |  |  |  |  |  |  |  |  |  |  |  |
|  | APR | **Authority Inspections & Approvals** |  |  | 2026-11-29 | 2027-08-19 |  |  |  |  |  |  |  |  |  |  |  |  |  |  |
| PEW-HOV-3020 |  | Road authority inspection & handover |  | 10d | 2026-11-29 | 2026-12-10 | PEW-CON-1120 |  | 2026-10-05 | 2026-10-18 | 210d |  |  | DOP 5-Day Office (Sun-Thu) | HOV | PEW | AAT | P3 | NONE |  |
| PEW-HOV-3010 |  | Utility authority acceptance & handover |  | 15d | 2027-01-13 | 2027-02-02 | PEW-TNC-2020, PEW-TNC-2030, PEW-TNC-2040, PEW-TNC-2050 FS+30d, PEW-TNC-2060 |  |  |  | 157d | 133d |  | DOP 5-Day Office (Sun-Thu) | HOV | PEW | AAT | P3 | NONE |  |
| PEW-HOV-3030 |  | Transit operating certificate |  | 20d | 2027-07-25 | 2027-08-19 | PEW-TNC-M071 |  |  |  | 24d | 0d |  | DOP 5-Day Office (Sun-Thu) | HOV | PEW | AAT | P3 | NONE |  |
| PEW-HOV-M040 |  | Enabling works handover complete | milestone | 0d | 2027-08-19 | 2027-08-19 | PEW-CON-1090, PEW-CON-1160, PEW-HOV-3010, PEW-HOV-3030 |  |  |  | 24d | 5d |  | DOP 5-Day Office (Sun-Thu) | HOV | PEW | PMO | P3 | NONE | RG3 |
|  | OPM | **Operator Mobilisation & Training** |  |  | 2027-01-03 | 2027-02-28 |  |  |  |  |  |  |  |  |  |  |  |  |  |  |
|  | RCT | **Recruitment & Onboarding** |  |  | 2027-01-03 | 2027-02-28 |  |  |  |  |  |  |  |  |  |  |  |  |  |  |
| PEW-OPM-4010 |  | Transit operator recruitment & training |  | 40d | 2027-01-03 | 2027-02-28 | PRG-D1R-M000, PRG-OPM-4005 |  |  |  | 124d | 96d | start on or after 2027-01-03 | DOP 5-Day Office (Sun-Thu) | OPM | PEW | OPR | P4 | NONE |  |
|  | OTE | **Operational Trials & Test Events** |  |  | 2027-07-19 | 2027-08-22 |  |  |  |  |  |  |  |  |  |  |  |  |  |  |
|  | TRL | **Operational Trials** |  |  | 2027-07-19 | 2027-08-22 |  |  |  |  |  |  |  |  |  |  |  |  |  |  |
| PEW-OTE-5020 |  | Traffic management & wayfinding trials |  | 10d | 2027-07-19 | 2027-07-28 | PEW-CON-1120, PEW-OTE-5010 SF+5d |  |  |  | 72d |  |  | DOP 7-Day T&C / Trials | OTE | PEW | SSY | P4 | NONE |  |
| PEW-OTE-5010 |  | Transit trial running (shadow operation) |  | 30d | 2027-07-24 | 2027-08-22 | PEW-OPM-4010, PEW-TNC-M071 |  |  |  | 39d | 0d |  | DOP 7-Day T&C / Trials | OTE | PEW | OPR | P4 | GIVER |  |
|  | D1R | **Day 1 Readiness** |  |  |  |  |  |  |  |  |  |  |  |  |  |  |  |  |  |  |
|  | PRG | **Programme Integration & Day 1** |  |  | 2025-03-02 | 2027-10-21 |  |  |  |  |  |  |  |  |  |  |  |  |  |  |
|  | CON | **Construction** |  |  |  |  |  |  |  |  |  |  |  |  |  |  |  |  |  |  |
|  | TNC | **Testing & Commissioning** |  |  |  |  |  |  |  |  |  |  |  |  |  |  |  |  |  |  |
|  | HOV | **Handover** |  |  |  |  |  |  |  |  |  |  |  |  |  |  |  |  |  |  |
|  | OPM | **Operator Mobilisation & Training** |  |  | 2026-03-01 | 2027-09-02 |  |  |  |  |  |  |  |  |  |  |  |  |  |  |
|  | RCT | **Recruitment & Onboarding** |  |  | 2026-03-01 | 2027-07-08 |  |  |  |  |  |  |  |  |  |  |  |  |  |  |
| PRG-OPM-4005 |  | Operator executive team mobilisation |  | 20d | 2026-03-01 A | 2026-03-30 A | PRG-D1R-M000 | 100% |  |  |  |  | start on or after 2026-03-01 | DOP 5-Day Office (Sun-Thu) | OPM | PRG | OPR | P4 | NONE |  |
| PRG-OPM-4010 |  | Destination-wide recruitment campaign |  | 100d | 2026-03-31 A | 2026-08-20 A | PRG-OPM-4005 | 100% |  |  |  |  |  | DOP 5-Day Office (Sun-Thu) | OPM | PRG | OPR | P4 | NONE |  |
| PRG-OPM-4030 |  | FM mobilisation & maintenance contracts live |  | 40d | 2027-04-21 | 2027-06-22 | PRG-D1R-M010 SS |  | 2027-03-31 | 2027-06-01 | 71d |  |  | DOP 5-Day Office (Sun-Thu) | OPM | PRG | FMS | P4 | NONE |  |
| PRG-OPM-4050 |  | Destination operating permits & licences |  | 25d | 2027-06-06 | 2027-07-08 | PRG-OPM-4005 |  |  |  | 64d |  | start on or after 2027-06-06 | DOP 5-Day Office (Sun-Thu) | OPM | PRG | AAT | P4 | NONE |  |

| ID | WBS | Activity | Type | Duration | Start | Finish | Predecessors | Complete | Remaining | Planned start | Planned finish | Total float | Free float | Constraint | Calendar | Workstream | Asset | Owner | Phase | Interface | Readiness Gate |
| --- | --- | --- | --- | --- | --- | --- | --- | --- | --- | --- | --- | --- | --- | --- | --- | --- | --- | --- | --- | --- | --- |
|  | TRN | **Training & Familiarisation** |  |  | 2026-08-23 | 2027-09-02 |  |  |  |  |  |  |  |  |  |  |  |  |  |  |  |
| PRG-OPM-4020 |  | Service culture & guest-experience training |  | 30d | 2026-08-23 A | 2026-10-04 A | PRG-OPM-4010 | 100% |  |  |  |  |  |  | DOP 5-Day Office (Sun-Thu) | OPM | PRG | OPR | P4 | NONE |  |
| PRG-OPM-4060 |  | Guest services & contact centre readiness |  | 20d | 2026-10-05 A | 2026-11-01 | PRG-OPM-4020 | 90% | 2d |  |  | 182d | 105d |  | DOP 5-Day Office (Sun-Thu) | OPM | PRG | OPR | P4 | NONE |  |
| PRG-OPM-4040 |  | Security & safety operational readiness accreditation |  | 30d | 2027-07-25 | 2027-09-02 | PRG-D1R-M020 |  |  |  |  | 24d |  |  | DOP 5-Day Office (Sun-Thu) | OPM | PRG | SSY | P4 | NONE |  |
|  | OTE | **Operational Trials & Test Events** |  |  | 2027-04-04 | 2027-10-13 |  |  |  |  |  |  |  |  |  |  |  |  |  |  |  |
|  | TEV | **Test Events** |  |  | 2027-10-06 | 2027-10-13 |  |  |  |  |  |  |  |  |  |  |  |  |  |  |  |
| PRG-OTE-5020 |  | Integrated destination test event (all assets) |  | 5d | 2027-10-06 | 2027-10-10 | DAR-OTE-5110, LWP-OTE-5110, MTP-OTE-5110, PBR-OTE-5110, PEW-OTE-5010, PRG-OPM-4030, PRG-OTE-5010 |  |  | 2027-09-20 | 2027-09-25 | -4d |  |  | DOP 7-Day T&C / Trials | OTE | PRG | OPR | P4 | RECEIVER |  |
| PRG-OTE-5030 |  | Opening ceremony operational rehearsal |  | 3d | 2027-10-11 | 2027-10-13 | PRG-OTE-5020 |  |  | 2027-09-26 | 2027-09-28 | -4d |  |  | DOP 7-Day T&C / Trials | OTE | PRG | SSY | P4 | NONE |  |
|  | TRL | **Operational Trials** |  |  | 2027-04-04 | 2027-05-13 |  |  |  |  |  |  |  |  |  |  |  |  |  |  |  |
| PRG-OTE-5010 |  | Destination ticketing, CRM & IT go-live |  | 30d | 2027-04-04 | 2027-05-13 | PRG-OPM-4060 |  |  |  |  | 77d | 46d | start on or after 2027-04-04 | DOP 5-Day Office (Sun-Thu) | OTE | PRG | OPR | P4 | NONE |  |
|  | D1R | **Day 1 Readiness** |  |  | 2025-03-02 | 2027-10-21 |  |  |  |  |  |  |  |  |  |  |  |  |  |  |  |
|  | GAT | **Readiness Gates** |  |  | 2025-03-02 | 2027-10-21 |  |  |  |  |  |  |  |  |  |  |  |  |  |  |  |
| PRG-D1R-M000 |  | Programme notice to proceed | milestone | 0d | 2025-03-02 A | 2025-03-02 A |  | 100% |  |  |  |  |  |  | DOP 5-Day Office (Sun-Thu) | D1R | PRG | PMO | P5 | NONE |  |
| PRG-D1R-M010 |  | RG1 Construction complete gate | milestone | 0d | 2027-04-20 | 2027-04-20 | DAR-CON-M142, LWP-CON-M142, MTP-CON-M142, PBR-CON-M142, PEW-CON-1090, PEW-CON-1120 |  |  | 2027-03-30 | 2027-03-30 | 106d | 0d |  | DOP 7-Day T&C / Trials | D1R | PRG | PMO | P5 | NONE | RG1 |
| PRG-D1R-M020 |  | RG2 T&C complete gate | milestone | 0d | 2027-07-23 | 2027-07-23 | DAR-TNC-M220, LWP-TNC-M220, MTP-TNC-M220, PBR-TNC-M220, PEW-TNC-M071 |  |  |  |  | 33d | 1d |  | DOP 7-Day T&C / Trials | D1R | PRG | PMO | P5 | NONE | RG2 |
| PRG-D1R-M030 |  | RG3 Ready to operate gate | milestone | 0d | 2027-08-26 | 2027-08-26 | DAR-HOV-M230, DAR-OPM-M150, LWP-HOV-M230, LWP-OPM-M150, MTP-HOV-M230, MTP-OPM-M150, PBR-HOV-M230, PBR-OPM-M150, PEW-HOV-M040 |  |  | 2027-08-19 | 2027-08-19 | 28d | 0d |  | DOP 7-Day T&C / Trials | D1R | PRG | PMO | P5 | NONE | RG3 |
| PRG-D1R-6020 |  | Day 1 command centre & hypercare set-up |  | 15d | 2027-08-27 | 2027-09-10 | PRG-D1R-M030 |  |  | 2027-08-20 | 2027-09-03 | 28d |  |  | DOP 7-Day T&C / Trials | D1R | PRG | PMO | P5 | NONE |  |
| PRG-D1R-6010 |  | Day 1 go/no-go readiness review |  | 5d | 2027-10-17 | 2027-10-21 | DAR-D1R-M020, LWP-D1R-M020, MTP-D1R-M020, PBR-D1R-M020, PEW-OTE-5020, PRG-D1R-6020, PRG-OPM-4040, PRG-OPM-4050, PRG-OTE-5030 |  |  | 2027-09-30 | 2027-10-06 | -5d |  |  | DOP 5-Day Office (Sun-Thu) | D1R | PRG | PMO | P5 | RECEIVER | RG4 |
| PRG-D1R-M040 |  | RG4 Day 1 go/no-go gate | milestone | 0d | 2027-10-21 | 2027-10-21 | PRG-D1R-6010 |  |  | 2027-10-06 | 2027-10-06 | -7d |  |  | DOP 7-Day T&C / Trials | D1R | PRG | PMO | P5 | NONE | RG4 |
| PRG-D1R-M999 |  | Day 1 Opening | milestone | 0d | 2027-10-21 | 2027-10-21 | PRG-D1R-M040 |  |  | 2027-10-06 | 2027-10-06 | -7d |  | finish on or before 2027-10-14 | DOP 7-Day T&C / Trials | D1R | PRG | PMO | P5 | NONE | RG4 |
|  | MGT | **Management & Supervision** |  |  | 2025-03-02 | 2027-10-21 |  |  |  |  |  |  |  |  |  |  |  |  |  |  |  |
| PRG-D1R-9010 |  | Programme management & controls (LOE) | level of effort | 666d | 2025-03-02 A | 2027-10-21 | PRG-D1R-M000 SS, PRG-D1R-M999 FF | 63% | 246d | 2025-03-02 | 2027-10-06 | -5d |  |  | DOP 5-Day Office (Sun-Thu) | D1R | PRG | PMO | P5 | NONE |  |

## Activity codes

| Code | Value | Meaning |
| --- | --- | --- |
| Asset | DAR | Dune Arena |
| Asset | LWP | Lagoon Water Park |
| Asset | MTP | Mesa Theme Park |
| Asset | PBR | Palm Boulevard (Retail & Dining) |
| Asset | PEW | Programme Enabling Works |
| Asset | PRG | Programme Integration & Day 1 |
| Interface | GIVER | Giver |
| Interface | NONE | None |
| Interface | RECEIVER | Receiver |
| Owner | AAT | Authority Approvals Team |
| Owner | FMS | Facilities Management |
| Owner | ICA | Independent Commissioning Authority |
| Owner | MEP | MEP & Systems Contractor |
| Owner | MWC | Main Works Contractor |
| Owner | OPR | Destination Operator |
| Owner | PMO | Programme Management Office |
| Owner | SSY | Security & Safety |
| Phase | P1 | Build |
| Phase | P2 | Commission |
| Phase | P3 | Handover |
| Phase | P4 | Prepare to operate |
| Phase | P5 | Open |
| Readiness Gate | RG1 | RG1 Construction complete |
| Readiness Gate | RG2 | RG2 T&C complete |
| Readiness Gate | RG3 | RG3 Ready to operate |
| Readiness Gate | RG4 | RG4 Day 1 go/no-go |
| Workstream | CON | Construction |
| Workstream | D1R | Day 1 Readiness |
| Workstream | HOV | Handover |
| Workstream | OPM | Operator Mobilisation & Training |
| Workstream | OTE | Operational Trials & Test Events |
| Workstream | TNC | Testing & Commissioning |
